# Mapeamento dos Processos TI

Schedule from ProjectLibre, 2016-10-19 to 2017-04-18.

## Calendars

- Padrão: Mon-Fri 08:00-12:00, 13:00-17:00; Sat-Sun off. Exceptions (off unless hours are given): 2016-11-01 to 2016-11-02, 2016-11-14 to 2016-11-15, 2016-12-25 to 2016-12-30, 2017-02-27 to 2017-03-01.

## Resources

| Resource | Group |
| --- | --- |
| Não atribuído |  |
| Tânia | Chacon |
| André | Chacon |
| Jorge | Chacon |
| Segurança da Informação | Smiles |
| Dono do Processo | Smiles |

## Schedule

| ID | WBS | Task | Duration | Start | Finish | Predecessors | Total slack | Constraint | Resources |
| --- | --- | --- | --- | --- | --- | --- | --- | --- | --- |
| 1 | 1 | **Projeto de Mapeamento dos Processos de TI** | 121d | 2016-10-19 | 2017-04-18 |  |  | start no earlier than 2016-10-19 |  |
| 2 | 1.1 | **Gerenciamento de Incidentes de Segurança da Informação** | 11d | 2016-10-19 | 2016-11-03 |  | 8800d |  |  |
| 3 | 1.1.1 | Criar processo no Jira (workflow e dashboard) | 5d | 2016-10-19 | 2016-10-25 |  | 8800d |  | Jorge |
| 4 | 1.1.2 | Validar processo no Jira | 1d | 2016-10-26 | 2016-10-26 | 3 | 8800d |  | Dono do Processo; Segurança da Informação |
| 5 | 1.1.3 | Ajustar processo no Jira | 1d | 2016-10-27 | 2016-10-27 | 4 | 8800d |  | Jorge |
| 6 | 1.1.4 | Criar material de treinamento | 1d | 2016-10-28 | 2016-10-28 | 5 | 8800d |  | Jorge |
| 7 | 1.1.5 | Validar material de treinamento | 1d | 2016-10-31 | 2016-10-31 | 6 | 8800d |  | Dono do Processo; Segurança da Informação |
| 8 | 1.1.6 | Ajustar material de treinamento | 1d | 2016-11-01 | 2016-11-01 | 7 | 8800d |  | Jorge |
| 9 | 1.1.7 | Realizar treinamento | 1d | 2016-11-03 | 2016-11-03 | 8 | 8800d |  | Jorge |
| 10 | 1.2 | **AI6 - Gerenciamento de Mudanças** | 20d | 2016-10-19 | 2016-11-17 |  | 10100d |  |  |
| 11 | 1.2.1 | Entender Gaps e os AS IS | 1d | 2016-10-19 | 2016-10-19 |  | 10100d |  | Segurança da Informação; Tânia |
| 12 | 1.2.2 | Mapear (escopo, objetivo, conceitos, diretrizes, fluxo macro, fluxo detalhado, matriz raci e guia rápido) | 2d | 2016-10-20 | 2016-10-21 | 11 | 10100d |  | Tânia |
| 13 | 1.2.3 | Validar processo | 1d | 2016-10-24 | 2016-10-24 | 12 | 10100d |  | Jorge |
| 14 | 1.2.4 | Validar processo | 2d | 2016-10-25 | 2016-10-26 | 13 | 10100d |  | Dono do Processo; Segurança da Informação |
| 15 | 1.2.5 | Ajustar | 1d | 2016-10-27 | 2016-10-27 | 14 | 10100d |  | Tânia |
| 16 | 1.2.6 | Publicar no Confluence | 1d | 2016-10-28 | 2016-10-28 | 15 | 10100d |  | André |
| 17 | 1.2.7 | Validar publicação | 1d | 2016-10-31 | 2016-10-31 | 16 | 10100d |  | Jorge |
| 18 | 1.2.8 | Criar processo no Jira (workflow e dashboard) | 4d | 2016-11-01 | 2016-11-07 | 17 | 10100d |  | Jorge |
| 19 | 1.2.9 | Validar processo no Jira | 1d | 2016-11-08 | 2016-11-08 | 18 | 10100d |  | Dono do Processo; Segurança da Informação |
| 20 | 1.2.10 | Ajustar processo no Jira | 1d | 2016-11-09 | 2016-11-09 | 19 | 10100d |  | Jorge |
| 21 | 1.2.11 | Criar material de treinamento | 1d | 2016-11-10 | 2016-11-10 | 20 | 10100d |  | Tânia |
| 22 | 1.2.12 | Validar material de treinamento | 1d | 2016-11-11 | 2016-11-11 | 21 | 10100d |  | Jorge |
| 23 | 1.2.13 | Ajustar material de treinamento | 1d | 2016-11-14 | 2016-11-14 | 22 | 10100d |  | Tânia |
| 24 | 1.2.14 | Realizar treinamento | 2d | 2016-11-16 | 2016-11-17 | 23 | 10100d |  | Tânia |

| ID | WBS | Task | Duration | Start | Finish | Predecessors | Total slack | Constraint | Resources |
| --- | --- | --- | --- | --- | --- | --- | --- | --- | --- |
| 25 | 1.3 | **DS5.9.A - Gestão de Antivírus** | 9d | 2016-10-19 | 2016-10-31 |  | 11200d | start no earlier than 2016-10-19 |  |
| 26 | 1.3.1 | Entender Gaps e os AS IS | 1d | 2016-10-19 | 2016-10-19 |  |  |  | Segurança da Informação; Tânia |
| 27 | 1.3.2 | Mapear (escopo, objetivo, conceitos, diretrizes, fluxo macro, fluxo detalhado, matriz raci, guia rápido e apresentação) | 2d | 2016-10-20 | 2016-10-21 | 26 |  |  | Tânia |
| 28 | 1.3.3 | Validar processo | 1d | 2016-10-24 | 2016-10-24 | 27 |  |  | Jorge |
| 29 | 1.3.4 | Validar processo | 2d | 2016-10-25 | 2016-10-26 | 28 |  |  | Dono do Processo; Segurança da Informação |
| 30 | 1.3.5 | Ajustar | 1d | 2016-10-27 | 2016-10-27 | 29 |  |  | Tânia |
| 31 | 1.3.6 | Publicar no Confluence | 1d | 2016-10-28 | 2016-10-28 | 30 | 11200d |  | André |
| 32 | 1.3.7 | Validar publicação | 1d | 2016-10-31 | 2016-10-31 | 31 | 11200d |  | Jorge |
| 33 | 1.3.8 | Realizar treinamento | 1d | 2016-10-28 | 2016-10-28 | 30 |  |  | Tânia |
| 34 | 1.4 | **DS5.9.B – Administrar Patches - Servidores das Bases** | 9d | 2016-10-31 | 2016-11-11 |  | 10400d |  |  |
| 35 | 1.4.1 | Entender Gaps e os AS IS | 1d | 2016-10-31 | 2016-10-31 | 33 |  |  | Segurança da Informação; Tânia |
| 36 | 1.4.2 | Mapear (escopo, objetivo, conceitos, diretrizes, fluxo macro, fluxo detalhado, matriz raci, guia rápido e apresentação) | 2d | 2016-11-01 | 2016-11-03 | 35 |  |  | Tânia |
| 37 | 1.4.3 | Validar processo | 1d | 2016-11-04 | 2016-11-04 | 36 |  |  | Jorge |
| 38 | 1.4.4 | Validar processo | 2d | 2016-11-07 | 2016-11-08 | 37 |  |  | Dono do Processo; Segurança da Informação |
| 39 | 1.4.5 | Ajustar | 1d | 2016-11-09 | 2016-11-09 | 38 |  |  | Tânia |
| 40 | 1.4.6 | Publicar no Confluence | 1d | 2016-11-10 | 2016-11-10 | 39 | 10400d |  | André |
| 41 | 1.4.7 | Validar publicação | 1d | 2016-11-11 | 2016-11-11 | 40 | 10400d |  | Jorge |
| 42 | 1.4.8 | Realizar treinamento | 1d | 2016-11-10 | 2016-11-10 | 39 |  |  | Tânia |
| 43 | 1.5 | **DS03 - Gerenciar o Desempenho e Capacidade** | 8d | 2016-11-04 | 2016-11-16 |  | 10200d |  |  |
| 44 | 1.5.1 | Entender Gaps e os AS IS | 1d | 2016-11-04 | 2016-11-04 | 9 | 8800d |  | Segurança da Informação; Tânia |
| 45 | 1.5.2 | Mapear (escopo, objetivo, conceitos, diretrizes, fluxo macro, fluxo detalhado, matriz raci, guia rápido e apresentação) | 2d | 2016-11-07 | 2016-11-08 | 44 | 8800d |  | Jorge |
| 46 | 1.5.3 | Validar processo | 1d | 2016-11-09 | 2016-11-09 | 45 | 8800d |  | Dono do Processo; Segurança da Informação |
| 47 | 1.5.4 | Ajustar | 2d | 2016-11-10 | 2016-11-11 | 46 | 8800d |  | Jorge |
| 48 | 1.5.5 | Publicar no Confluence | 1d | 2016-11-14 | 2016-11-14 | 47 | 10200d |  | André |
| 49 | 1.5.6 | Validar publicação | 1d | 2016-11-16 | 2016-11-16 | 48 | 10200d |  | Jorge |
| 50 | 1.5.7 | Realizar treinamento | 1d | 2016-11-14 | 2016-11-14 | 47 | 8800d |  | Jorge |

| ID | WBS | Task | Duration | Start | Finish | Predecessors | Total slack | Resources |
| --- | --- | --- | --- | --- | --- | --- | --- | --- |
| 51 | 1.6 | **M01 - Monitorar Processos** | 9d | 2016-11-11 | 2016-11-24 |  | 9600d |  |
| 52 | 1.6.1 | Entender Gaps e os AS IS | 1d | 2016-11-11 | 2016-11-11 | 42 |  | Segurança da Informação; Tânia |
| 53 | 1.6.2 | Mapear (escopo, objetivo, conceitos, diretrizes, fluxo macro, fluxo detalhado, matriz raci, guia rápido e apresentação) | 2d | 2016-11-14 | 2016-11-16 | 52 |  | Tânia |
| 54 | 1.6.3 | Validar processo | 1d | 2016-11-17 | 2016-11-17 | 53 |  | Jorge |
| 55 | 1.6.4 | Validar processo | 2d | 2016-11-18 | 2016-11-21 | 54 |  | Dono do Processo; Segurança da Informação |
| 56 | 1.6.5 | Ajustar | 1d | 2016-11-22 | 2016-11-22 | 55 |  | Tânia |
| 57 | 1.6.6 | Publicar no Confluence | 1d | 2016-11-23 | 2016-11-23 | 56 | 9600d | André |
| 58 | 1.6.7 | Validar publicação | 1d | 2016-11-24 | 2016-11-24 | 57 | 9600d | Jorge |
| 59 | 1.6.8 | Realizar treinamento | 1d | 2016-11-23 | 2016-11-23 | 56 |  | Tânia |
| 60 | 1.7 | **DS1 - Definir e Gerenciar Níveis de Serviço** | 8d | 2016-11-16 | 2016-11-25 |  | 9500d |  |
| 61 | 1.7.1 | Entender Gaps e os AS IS | 1d | 2016-11-16 | 2016-11-16 | 50 | 8800d | Segurança da Informação; Tânia |
| 62 | 1.7.2 | Mapear (escopo, objetivo, conceitos, diretrizes, fluxo macro, fluxo detalhado, matriz raci, guia rápido e apresentação) | 2d | 2016-11-17 | 2016-11-18 | 61 | 8800d | Jorge |
| 63 | 1.7.3 | Validar processo | 1d | 2016-11-21 | 2016-11-21 | 62 | 8800d | Dono do Processo; Segurança da Informação |
| 64 | 1.7.4 | Ajustar | 2d | 2016-11-22 | 2016-11-23 | 63 | 8800d | Jorge |
| 65 | 1.7.5 | Publicar no Confluence | 1d | 2016-11-24 | 2016-11-24 | 64 | 9500d | André |
| 66 | 1.7.6 | Validar publicação | 1d | 2016-11-25 | 2016-11-25 | 65 | 9500d | Jorge |
| 67 | 1.7.7 | Realizar treinamento | 1d | 2016-11-24 | 2016-11-24 | 64 | 8800d | Jorge |
| 68 | 1.8 | **DS2 - Gerenciar Serviços de Terceiros** | 8d | 2016-11-25 | 2016-12-06 |  | 8800d |  |
| 69 | 1.8.1 | Entender Gaps e os AS IS | 1d | 2016-11-25 | 2016-11-25 | 67 | 8800d | Segurança da Informação; Tânia |
| 70 | 1.8.2 | Mapear (escopo, objetivo, conceitos, diretrizes, fluxo macro, fluxo detalhado, matriz raci, guia rápido e apresentação) | 2d | 2016-11-28 | 2016-11-29 | 69 | 8800d | Jorge |
| 71 | 1.8.3 | Validar processo | 1d | 2016-11-30 | 2016-11-30 | 70 | 8800d | Dono do Processo; Segurança da Informação |
| 72 | 1.8.4 | Ajustar | 2d | 2016-12-01 | 2016-12-02 | 71 | 8800d | Jorge |
| 73 | 1.8.5 | Publicar no Confluence | 1d | 2016-12-05 | 2016-12-05 | 72 | 8800d | André |
| 74 | 1.8.6 | Validar publicação | 1d | 2016-12-06 | 2016-12-06 | 73 | 8800d | Jorge |
| 75 | 1.8.7 | Realizar treinamento | 1d | 2016-12-05 | 2016-12-05 | 72 | 8900d | Jorge |

| ID | WBS | Task | Duration | Start | Finish | Predecessors | Total slack | Resources |
| --- | --- | --- | --- | --- | --- | --- | --- | --- |
| 76 | 1.9 | **PO2 - Definir Arquitetura da Informação** | 9d | 2016-11-24 | 2016-12-06 |  | 8800d |  |
| 77 | 1.9.1 | Entender Gaps e os AS IS | 1d | 2016-11-24 | 2016-11-24 | 59 |  | Segurança da Informação; Tânia |
| 78 | 1.9.2 | Mapear (escopo, objetivo, conceitos, diretrizes, fluxo macro, fluxo detalhado, matriz raci, guia rápido e apresentação) | 2d | 2016-11-25 | 2016-11-28 | 77 |  | Tânia |
| 79 | 1.9.3 | Validar processo | 1d | 2016-11-29 | 2016-11-29 | 78 |  | Jorge |
| 80 | 1.9.4 | Validar processo | 2d | 2016-11-30 | 2016-12-01 | 79 |  | Dono do Processo; Segurança da Informação |
| 81 | 1.9.5 | Ajustar | 1d | 2016-12-02 | 2016-12-02 | 80 |  | Tânia |
| 82 | 1.9.6 | Publicar no Confluence | 1d | 2016-12-05 | 2016-12-05 | 81 | 8800d | André |
| 83 | 1.9.7 | Validar publicação | 1d | 2016-12-06 | 2016-12-06 | 82 | 8800d | Jorge |
| 84 | 1.9.8 | Realizar treinamento | 1d | 2016-12-05 | 2016-12-05 | 81 |  | Tânia |
| 85 | 1.10 | **AI1 – Identificar Soluções Automatizadas** | 9d | 2016-12-06 | 2016-12-16 |  | 8000d |  |
| 86 | 1.10.1 | Entender Gaps e os AS IS | 1d | 2016-12-06 | 2016-12-06 | 84 |  | Segurança da Informação; Tânia |
| 87 | 1.10.2 | Mapear (escopo, objetivo, conceitos, diretrizes, fluxo macro, fluxo detalhado, matriz raci, guia rápido e apresentação) | 2d | 2016-12-07 | 2016-12-08 | 86 |  | Tânia |
| 88 | 1.10.3 | Validar processo | 1d | 2016-12-09 | 2016-12-09 | 87 |  | Jorge |
| 89 | 1.10.4 | Validar processo | 2d | 2016-12-12 | 2016-12-13 | 88 |  | Dono do Processo; Segurança da Informação |
| 90 | 1.10.5 | Ajustar | 1d | 2016-12-14 | 2016-12-14 | 89 |  | Tânia |
| 91 | 1.10.6 | Publicar no Confluence | 1d | 2016-12-15 | 2016-12-15 | 90 | 8000d | André |
| 92 | 1.10.7 | Validar publicação | 1d | 2016-12-16 | 2016-12-16 | 91 | 8000d | Jorge |
| 93 | 1.10.8 | Realizar treinamento | 1d | 2016-12-15 | 2016-12-15 | 90 |  | Tânia |
| 94 | 1.11 | **AI2 - Adquirir e manter aplicações de software** | 9d | 2016-12-16 | 2017-01-04 |  | 7200d |  |
| 95 | 1.11.1 | Entender Gaps e os AS IS | 1d | 2016-12-16 | 2016-12-16 | 93 |  | Segurança da Informação; Tânia |
| 96 | 1.11.2 | Mapear (escopo, objetivo, conceitos, diretrizes, fluxo macro, fluxo detalhado, matriz raci, guia rápido e apresentação) | 2d | 2016-12-19 | 2016-12-20 | 95 |  | Tânia |
| 97 | 1.11.3 | Validar processo | 1d | 2016-12-21 | 2016-12-21 | 96 |  | Jorge |
| 98 | 1.11.4 | Validar processo | 2d | 2016-12-22 | 2016-12-23 | 97 |  | Dono do Processo; Segurança da Informação |
| 99 | 1.11.5 | Ajustar | 1d | 2017-01-02 | 2017-01-02 | 98 |  | Tânia |
| 100 | 1.11.6 | Publicar no Confluence | 1d | 2017-01-03 | 2017-01-03 | 99 | 7200d | André |
| 101 | 1.11.7 | Validar publicação | 1d | 2017-01-04 | 2017-01-04 | 100 | 7200d | Jorge |
| 102 | 1.11.8 | Realizar treinamento | 1d | 2017-01-03 | 2017-01-03 | 99 |  | Tânia |

| ID | WBS | Task | Duration | Start | Finish | Predecessors | Total slack | Resources |
| --- | --- | --- | --- | --- | --- | --- | --- | --- |
| 103 | 1.12 | **AI3 - Adquirir e manter infraestrutura tecnológica** | 9d | 2017-01-04 | 2017-01-16 |  | 6400d |  |
| 104 | 1.12.1 | Entender Gaps e os AS IS | 1d | 2017-01-04 | 2017-01-04 | 102 |  | Segurança da Informação; Tânia |
| 105 | 1.12.2 | Mapear (escopo, objetivo, conceitos, diretrizes, fluxo macro, fluxo detalhado, matriz raci, guia rápido e apresentação) | 2d | 2017-01-05 | 2017-01-06 | 104 |  | Tânia |
| 106 | 1.12.3 | Validar processo | 1d | 2017-01-09 | 2017-01-09 | 105 |  | Jorge |
| 107 | 1.12.4 | Validar processo | 2d | 2017-01-10 | 2017-01-11 | 106 |  | Dono do Processo; Segurança da Informação |
| 108 | 1.12.5 | Ajustar | 1d | 2017-01-12 | 2017-01-12 | 107 |  | Tânia |
| 109 | 1.12.6 | Publicar no Confluence | 1d | 2017-01-13 | 2017-01-13 | 108 | 6400d | André |
| 110 | 1.12.7 | Validar publicação | 1d | 2017-01-16 | 2017-01-16 | 109 | 6400d | Jorge |
| 111 | 1.12.8 | Realizar treinamento | 1d | 2017-01-13 | 2017-01-13 | 108 |  | Tânia |
| 112 | 1.13 | **AI4 - Desenvolver e manter manuais de Sistemas** | 9d | 2017-01-16 | 2017-01-26 |  | 5600d |  |
| 113 | 1.13.1 | Entender Gaps e os AS IS | 1d | 2017-01-16 | 2017-01-16 | 111 |  | Segurança da Informação; Tânia |
| 114 | 1.13.2 | Mapear (escopo, objetivo, conceitos, diretrizes, fluxo macro, fluxo detalhado, matriz raci, guia rápido e apresentação) | 2d | 2017-01-17 | 2017-01-18 | 113 |  | Tânia |
| 115 | 1.13.3 | Validar processo | 1d | 2017-01-19 | 2017-01-19 | 114 |  | Jorge |
| 116 | 1.13.4 | Validar processo | 2d | 2017-01-20 | 2017-01-23 | 115 |  | Dono do Processo; Segurança da Informação |
| 117 | 1.13.5 | Ajustar | 1d | 2017-01-24 | 2017-01-24 | 116 |  | Tânia |
| 118 | 1.13.6 | Publicar no Confluence | 1d | 2017-01-25 | 2017-01-25 | 117 | 5600d | André |
| 119 | 1.13.7 | Validar publicação | 1d | 2017-01-26 | 2017-01-26 | 118 | 5600d | Jorge |
| 120 | 1.13.8 | Realizar treinamento | 1d | 2017-01-25 | 2017-01-25 | 117 |  | Tânia |
| 121 | 1.14 | **AI7 - Gerenciamento, Instalação e Homologação** | 9d | 2017-01-26 | 2017-02-07 |  | 4800d |  |
| 122 | 1.14.1 | Entender Gaps e os AS IS | 1d | 2017-01-26 | 2017-01-26 | 120 |  | Segurança da Informação; Tânia |
| 123 | 1.14.2 | Mapear (escopo, objetivo, conceitos, diretrizes, fluxo macro, fluxo detalhado, matriz raci, guia rápido e apresentação) | 2d | 2017-01-27 | 2017-01-30 | 122 |  | Tânia |
| 124 | 1.14.3 | Validar processo | 1d | 2017-01-31 | 2017-01-31 | 123 |  | Jorge |
| 125 | 1.14.4 | Validar processo | 2d | 2017-02-01 | 2017-02-02 | 124 |  | Dono do Processo; Segurança da Informação |
| 126 | 1.14.5 | Ajustar | 1d | 2017-02-03 | 2017-02-03 | 125 |  | Tânia |
| 127 | 1.14.6 | Publicar no Confluence | 1d | 2017-02-06 | 2017-02-06 | 126 | 4800d | André |
| 128 | 1.14.7 | Validar publicação | 1d | 2017-02-07 | 2017-02-07 | 127 | 4800d | Jorge |
| 129 | 1.14.8 | Realizar treinamento | 1d | 2017-02-06 | 2017-02-06 | 126 |  | Tânia |

| ID | WBS | Task | Duration | Start | Finish | Predecessors | Total slack | Resources |
| --- | --- | --- | --- | --- | --- | --- | --- | --- |
| 130 | 1.15 | **DS5.5 - Assegurar Segurança de Sistemas** | 9d | 2017-02-07 | 2017-02-17 |  | 4000d |  |
| 131 | 1.15.1 | Entender Gaps e os AS IS | 1d | 2017-02-07 | 2017-02-07 | 129 |  | Segurança da Informação; Tânia |
| 132 | 1.15.2 | Mapear (escopo, objetivo, conceitos, diretrizes, fluxo macro, fluxo detalhado, matriz raci, guia rápido e apresentação) | 2d | 2017-02-08 | 2017-02-09 | 131 |  | Tânia |
| 133 | 1.15.3 | Validar processo | 1d | 2017-02-10 | 2017-02-10 | 132 |  | Jorge |
| 134 | 1.15.4 | Validar processo | 2d | 2017-02-13 | 2017-02-14 | 133 |  | Dono do Processo; Segurança da Informação |
| 135 | 1.15.5 | Ajustar | 1d | 2017-02-15 | 2017-02-15 | 134 |  | Tânia |
| 136 | 1.15.6 | Publicar no Confluence | 1d | 2017-02-16 | 2017-02-16 | 135 | 4000d | André |
| 137 | 1.15.7 | Validar publicação | 1d | 2017-02-17 | 2017-02-17 | 136 | 4000d | Jorge |
| 138 | 1.15.8 | Realizar treinamento | 1d | 2017-02-16 | 2017-02-16 | 135 |  | Tânia |
| 139 | 1.16 | **DS5.8 - Gestão de chaves criptográficas** | 9d | 2017-02-17 | 2017-03-03 |  | 3200d |  |
| 140 | 1.16.1 | Entender Gaps e os AS IS | 1d | 2017-02-17 | 2017-02-17 | 138 |  | Segurança da Informação; Tânia |
| 141 | 1.16.2 | Mapear (escopo, objetivo, conceitos, diretrizes, fluxo macro, fluxo detalhado, matriz raci, guia rápido e apresentação) | 2d | 2017-02-20 | 2017-02-21 | 140 |  | Tânia |
| 142 | 1.16.3 | Validar processo | 1d | 2017-02-22 | 2017-02-22 | 141 |  | Jorge |
| 143 | 1.16.4 | Validar processo | 2d | 2017-02-23 | 2017-02-24 | 142 |  | Dono do Processo; Segurança da Informação |
| 144 | 1.16.5 | Ajustar | 1d | 2017-02-27 | 2017-02-27 | 143 |  | Tânia |
| 145 | 1.16.6 | Publicar no Confluence | 1d | 2017-03-02 | 2017-03-02 | 144 | 3200d | André |
| 146 | 1.16.7 | Validar publicação | 1d | 2017-03-03 | 2017-03-03 | 145 | 3200d | Jorge |
| 147 | 1.16.8 | Realizar treinamento | 1d | 2017-03-02 | 2017-03-02 | 144 |  | Tânia |
| 148 | 1.17 | **DS5.10 - Administração de Firewall** | 9d | 2017-03-03 | 2017-03-15 |  | 2400d |  |
| 149 | 1.17.1 | Entender Gaps e os AS IS | 1d | 2017-03-03 | 2017-03-03 | 147 |  | Segurança da Informação; Tânia |
| 150 | 1.17.2 | Mapear (escopo, objetivo, conceitos, diretrizes, fluxo macro, fluxo detalhado, matriz raci, guia rápido e apresentação) | 2d | 2017-03-06 | 2017-03-07 | 149 |  | Tânia |
| 151 | 1.17.3 | Validar processo | 1d | 2017-03-08 | 2017-03-08 | 150 |  | Jorge |
| 152 | 1.17.4 | Validar processo | 2d | 2017-03-09 | 2017-03-10 | 151 |  | Dono do Processo; Segurança da Informação |
| 153 | 1.17.5 | Ajustar | 1d | 2017-03-13 | 2017-03-13 | 152 |  | Tânia |
| 154 | 1.17.6 | Publicar no Confluence | 1d | 2017-03-14 | 2017-03-14 | 153 | 2400d | André |
| 155 | 1.17.7 | Validar publicação | 1d | 2017-03-15 | 2017-03-15 | 154 | 2400d | Jorge |
| 156 | 1.17.8 | Realizar treinamento | 1d | 2017-03-14 | 2017-03-14 | 153 |  | Tânia |

| ID | WBS | Task | Duration | Start | Finish | Predecessors | Total slack | Resources |
| --- | --- | --- | --- | --- | --- | --- | --- | --- |
| 157 | 1.18 | **DS5.11 - Gestão de Certificados Digitais** | 9d | 2017-03-15 | 2017-03-27 |  | 1600d |  |
| 158 | 1.18.1 | Entender Gaps e os AS IS | 1d | 2017-03-15 | 2017-03-15 | 156 |  | Segurança da Informação; Tânia |
| 159 | 1.18.2 | Mapear (escopo, objetivo, conceitos, diretrizes, fluxo macro, fluxo detalhado, matriz raci, guia rápido e apresentação) | 2d | 2017-03-16 | 2017-03-17 | 158 |  | Tânia |
| 160 | 1.18.3 | Validar processo | 1d | 2017-03-20 | 2017-03-20 | 159 |  | Jorge |
| 161 | 1.18.4 | Validar processo | 2d | 2017-03-21 | 2017-03-22 | 160 |  | Dono do Processo; Segurança da Informação |
| 162 | 1.18.5 | Ajustar | 1d | 2017-03-23 | 2017-03-23 | 161 |  | Tânia |
| 163 | 1.18.6 | Publicar no Confluence | 1d | 2017-03-24 | 2017-03-24 | 162 | 1600d | André |
| 164 | 1.18.7 | Validar publicação | 1d | 2017-03-27 | 2017-03-27 | 163 | 1600d | Jorge |
| 165 | 1.18.8 | Realizar treinamento | 1d | 2017-03-24 | 2017-03-24 | 162 |  | Tânia |
| 166 | 1.19 | **DS 11 - Gerenciar Copias de Segurança** | 9d | 2017-03-27 | 2017-04-06 |  | 800d |  |
| 167 | 1.19.1 | Entender Gaps e os AS IS | 1d | 2017-03-27 | 2017-03-27 | 165 |  | Segurança da Informação; Tânia |
| 168 | 1.19.2 | Mapear (escopo, objetivo, conceitos, diretrizes, fluxo macro, fluxo detalhado, matriz raci, guia rápido e apresentação) | 2d | 2017-03-28 | 2017-03-29 | 167 |  | Tânia |
| 169 | 1.19.3 | Validar processo | 1d | 2017-03-30 | 2017-03-30 | 168 |  | Jorge |
| 170 | 1.19.4 | Validar processo | 2d | 2017-03-31 | 2017-04-03 | 169 |  | Dono do Processo; Segurança da Informação |
| 171 | 1.19.5 | Ajustar | 1d | 2017-04-04 | 2017-04-04 | 170 |  | Tânia |
| 172 | 1.19.6 | Publicar no Confluence | 1d | 2017-04-05 | 2017-04-05 | 171 | 800d | André |
| 173 | 1.19.7 | Validar publicação | 1d | 2017-04-06 | 2017-04-06 | 172 | 800d | Jorge |
| 174 | 1.19.8 | Realizar treinamento | 1d | 2017-04-05 | 2017-04-05 | 171 |  | Tânia |
| 175 | 1.20 | **DS12 - Gerenciar Instalações Físicas** | 9d | 2017-04-06 | 2017-04-18 |  |  |  |
| 176 | 1.20.1 | Entender Gaps e os AS IS | 1d | 2017-04-06 | 2017-04-06 | 174 |  | Segurança da Informação; Tânia |
| 177 | 1.20.2 | Mapear (escopo, objetivo, conceitos, diretrizes, fluxo macro, fluxo detalhado, matriz raci, guia rápido e apresentação) | 2d | 2017-04-07 | 2017-04-10 | 176 |  | Tânia |
| 178 | 1.20.3 | Validar processo | 1d | 2017-04-11 | 2017-04-11 | 177 |  | Jorge |
| 179 | 1.20.4 | Validar processo | 2d | 2017-04-12 | 2017-04-13 | 178 |  | Dono do Processo; Segurança da Informação |
| 180 | 1.20.5 | Ajustar | 1d | 2017-04-14 | 2017-04-14 | 179 |  | Tânia |
| 181 | 1.20.6 | Publicar no Confluence | 1d | 2017-04-17 | 2017-04-17 | 180 |  | André |
| 182 | 1.20.7 | Validar publicação | 1d | 2017-04-18 | 2017-04-18 | 181 |  | Jorge |
| 183 | 1.20.8 | Realizar treinamento | 1d | 2017-04-17 | 2017-04-17 | 180 | 100d | Tânia |
