# Mapeamento dos Processos TI

Schedule from ProjectLibre, 2016-09-30 to 2017-02-09.

## Calendars

- Padrão: Mon-Fri 08:00-12:00, 13:00-17:00; Sat-Sun off. Exceptions (off unless hours are given): 2016-10-11 to 2016-10-12, 2016-11-14 to 2016-11-15, 2016-12-25 to 2016-12-30.

## Resources

| Resource |
| --- |
| Não atribuído |
| Tânia |
| André |
| Jorge |
| Segurança da Informação |
| Dono do Processo |

## Schedule

| ID | WBS | Task | Duration | Start | Finish | Predecessors | Total slack | Constraint | Resources |
| --- | --- | --- | --- | --- | --- | --- | --- | --- | --- |
| 1 | 1 | **Gerenciamento de Incidentes de Segurança da Informação** | 86.5d | 2016-09-30 12:00 | 2017-02-09 17:00 |  |  | start no earlier than 2016-10-03 08:00 |  |
| 2 | 1.1 | Criar processo no Jira (workflow e dashboard) | 2d | 2016-09-30 12:00 | 2016-10-04 12:00 |  | -50d | as late as possible | Jorge |
| 3 | 1.2 | Validar processo no Jira | 0.5d | 2017-02-06 08:00 | 2017-02-06 12:00 | 2 | 8050d | as late as possible | Dono do Processo; Segurança da Informação |
| 4 | 1.3 | Ajustar processo no Jira | 1d | 2017-02-06 12:00 | 2017-02-07 12:00 | 3 |  | as late as possible | Jorge |
| 5 | 1.4 | Criar material de treinamento | 1d | 2017-02-07 12:00 | 2017-02-08 12:00 | 4 |  | as late as possible | Tânia |
| 6 | 1.5 | Validar material de treinamento | 0.5d | 2017-02-08 12:00 | 2017-02-08 17:00 | 5 |  | as late as possible | Jorge |
| 7 | 1.6 | Ajustar material de treinamento | 0.5d | 2017-02-09 08:00 | 2017-02-09 12:00 | 6 |  | as late as possible | Tânia |
| 8 | 1.7 | Realizar treinamento | 0.5d | 2017-02-09 12:00 | 2017-02-09 17:00 | 7 |  | as late as possible | Tânia |
| 9 | 2 | **DS5.9.A - Gestão de Antivírus** | 84.5d | 2016-10-04 12:00 | 2017-02-09 17:00 |  |  |  |  |
| 10 | 2.1 | Entender Gaps e os AS IS | 0.5d | 2016-10-04 12:00 | 2016-10-04 17:00 | 2 |  | as late as possible | Tânia; Segurança da Informação |
| 11 | 2.2 | Mapear (escopo, objetivo, conceitos, diretrizes, fluxo macro, fluxo detalhado, matriz raci, guia rápido e apresentação) | 1d | 2016-10-05 08:00 | 2016-10-05 17:00 | 10 |  | as late as possible | Tânia |
| 12 | 2.3 | Validar processo | 0.5d | 2016-10-06 08:00 | 2016-10-06 12:00 | 11 |  | as late as possible | Jorge |
| 13 | 2.4 | Validar processo | 0.5d | 2016-10-06 12:00 | 2016-10-06 17:00 | 12 |  | as late as possible | Segurança da Informação; Dono do Processo |
| 14 | 2.5 | Ajustar | 0.5d | 2016-10-07 08:00 | 2016-10-07 12:00 | 13 |  | as late as possible | Tânia |
| 15 | 2.6 | Publicar no Confluence | 1d | 2017-02-08 08:00 | 2017-02-08 17:00 | 14 | 7950d | as late as possible | André |
| 16 | 2.7 | Validar publicação | 1d | 2017-02-09 08:00 | 2017-02-09 17:00 | 15 |  | as late as possible | Jorge |
| 17 | 2.8 | Realizar treinamento | 0.5d | 2016-10-07 12:00 | 2016-10-07 17:00 | 14 |  | as late as possible | Tânia |
| 18 | 3 | **DS5.9.B – Administrar Patches - Servidores das Bases** | 81d | 2016-10-10 08:00 | 2017-02-09 17:00 |  |  |  |  |
| 19 | 3.1 | Entender Gaps e os AS IS | 0.5d | 2016-10-10 08:00 | 2016-10-10 12:00 | 17 |  | as late as possible | Segurança da Informação; Tânia |
| 20 | 3.2 | Mapear (escopo, objetivo, conceitos, diretrizes, fluxo macro, fluxo detalhado, matriz raci, guia rápido e apresentação) | 1d | 2016-10-10 12:00 | 2016-10-11 12:00 | 19 |  | as late as possible | Tânia |
| 21 | 3.3 | Validar processo | 0.5d | 2016-10-11 12:00 | 2016-10-11 17:00 | 20 |  | as late as possible | Jorge |
| 22 | 3.4 | Validar processo | 0.5d | 2016-10-13 08:00 | 2016-10-13 12:00 | 21 |  | as late as possible | Dono do Processo; Segurança da Informação |
| 23 | 3.5 | Ajustar | 0.5d | 2016-10-13 12:00 | 2016-10-13 17:00 | 22 |  | as late as possible | Tânia |
| 24 | 3.6 | Publicar no Confluence | 1d | 2017-02-08 08:00 | 2017-02-08 17:00 | 23 | 7600d | as late as possible | André |
| 25 | 3.7 | Validar publicação | 1d | 2017-02-09 08:00 | 2017-02-09 17:00 | 24 |  | as late as possible | Jorge |
| 26 | 3.8 | Realizar treinamento | 0.5d | 2016-10-14 08:00 | 2016-10-14 12:00 | 23 |  | as late as possible | Tânia |

| ID | WBS | Task | Duration | Start | Finish | Predecessors | Total slack | Constraint | Resources |
| --- | --- | --- | --- | --- | --- | --- | --- | --- | --- |
| 27 | 4 | **PO2 - Definir Arquitetura da Informação** | 77.5d | 2016-10-14 12:00 | 2017-02-09 17:00 |  |  |  |  |
| 28 | 4.1 | Entender Gaps e os AS IS | 0.5d | 2016-10-14 12:00 | 2016-10-14 17:00 | 26 |  | as late as possible | Segurança da Informação; Tânia |
| 29 | 4.2 | Mapear (escopo, objetivo, conceitos, diretrizes, fluxo macro, fluxo detalhado, matriz raci, guia rápido e apresentação) | 1d | 2016-10-17 08:00 | 2016-10-17 17:00 | 28 |  | as late as possible | Tânia |
| 30 | 4.3 | Validar processo | 0.5d | 2016-10-18 08:00 | 2016-10-18 12:00 | 29 |  | as late as possible | Jorge |
| 31 | 4.4 | Validar processo | 0.5d | 2016-10-18 12:00 | 2016-10-18 17:00 | 30 |  | as late as possible | Dono do Processo; Segurança da Informação |
| 32 | 4.5 | Ajustar | 0.5d | 2016-10-19 08:00 | 2016-10-19 12:00 | 31 |  | as late as possible | Tânia |
| 33 | 4.6 | Publicar no Confluence | 1d | 2017-02-08 08:00 | 2017-02-08 17:00 | 32 | 7250d | as late as possible | André |
| 34 | 4.7 | Validar publicação | 1d | 2017-02-09 08:00 | 2017-02-09 17:00 | 33 |  | as late as possible | Jorge |
| 35 | 4.8 | Realizar treinamento | 0.5d | 2016-10-19 12:00 | 2016-10-19 17:00 | 32 |  | as late as possible | Tânia |
| 36 | 5 | **DS03 - Gerenciar o Desempenho e Capacidade** | 74d | 2016-10-20 08:00 | 2017-02-09 17:00 |  |  |  |  |
| 37 | 5.1 | Entender Gaps e os AS IS | 1d | 2016-10-20 08:00 | 2016-10-20 17:00 | 35 |  | as late as possible | Segurança da Informação; Tânia |
| 38 | 5.2 | Mapear (escopo, objetivo, conceitos, diretrizes, fluxo macro, fluxo detalhado, matriz raci, guia rápido e apresentação) | 1d | 2016-10-21 08:00 | 2016-10-21 17:00 | 37 |  | as late as possible | Tânia |
| 39 | 5.3 | Validar processo | 0.5d | 2016-10-24 08:00 | 2016-10-24 12:00 | 38 |  | as late as possible | Jorge |
| 40 | 5.4 | Validar processo | 0.5d | 2016-10-24 12:00 | 2016-10-24 17:00 | 39 |  | as late as possible | Dono do Processo; Segurança da Informação |
| 41 | 5.5 | Ajustar | 0.5d | 2016-10-25 08:00 | 2016-10-25 12:00 | 40 |  | as late as possible | Tânia |
| 42 | 5.6 | Publicar no Confluence | 1d | 2017-02-08 08:00 | 2017-02-08 17:00 | 41 | 6850d | as late as possible | André |
| 43 | 5.7 | Validar publicação | 1d | 2017-02-09 08:00 | 2017-02-09 17:00 | 42 |  | as late as possible | Jorge |
| 44 | 5.8 | Realizar treinamento | 0.5d | 2016-10-25 12:00 | 2016-10-25 17:00 | 41 |  | as late as possible | Tânia |
| 45 | 6 | **M01 - Monitorar Processos** | 70d | 2016-10-26 08:00 | 2017-02-09 17:00 |  |  |  |  |
| 46 | 6.1 | Entender Gaps e os AS IS | 1d | 2016-10-26 08:00 | 2016-10-26 17:00 | 44 |  | as late as possible | Segurança da Informação; Tânia |
| 47 | 6.2 | Mapear (escopo, objetivo, conceitos, diretrizes, fluxo macro, fluxo detalhado, matriz raci, guia rápido e apresentação) | 1d | 2016-10-27 08:00 | 2016-10-27 17:00 | 46 |  | as late as possible | Tânia |
| 48 | 6.3 | Validar processo | 0.5d | 2016-10-28 08:00 | 2016-10-28 12:00 | 47 |  | as late as possible | Jorge |
| 49 | 6.4 | Validar processo | 0.5d | 2016-10-28 12:00 | 2016-10-28 17:00 | 48 |  | as late as possible | Dono do Processo; Segurança da Informação |
| 50 | 6.5 | Ajustar | 0.5d | 2016-10-31 08:00 | 2016-10-31 12:00 | 49 |  | as late as possible | Tânia |
| 51 | 6.6 | Publicar no Confluence | 1d | 2017-02-08 08:00 | 2017-02-08 17:00 | 50 | 6450d | as late as possible | André |
| 52 | 6.7 | Validar publicação | 1d | 2017-02-09 08:00 | 2017-02-09 17:00 | 51 |  | as late as possible | Jorge |
| 53 | 6.8 | Realizar treinamento | 0.5d | 2016-10-31 12:00 | 2016-10-31 17:00 | 50 |  | as late as possible | Tânia |

| ID | WBS | Task | Duration | Start | Finish | Predecessors | Total slack | Constraint | Resources |
| --- | --- | --- | --- | --- | --- | --- | --- | --- | --- |
| 54 | 7 | **AI6 - Gerenciamento de Mudanças** | 66d | 2016-11-01 08:00 | 2017-02-09 17:00 |  |  |  |  |
| 55 | 7.1 | Entender Gaps e os AS IS | 1d | 2016-11-01 08:00 | 2016-11-01 17:00 | 53 |  | as late as possible | Segurança da Informação; Tânia |
| 56 | 7.2 | Mapear (escopo, objetivo, conceitos, diretrizes, fluxo macro, fluxo detalhado, matriz raci e guia rápido) | 1d | 2016-11-03 08:00 | 2016-11-03 17:00 | 55 |  | as late as possible | Tânia |
| 57 | 7.3 | Validar processo | 0.5d | 2016-11-04 08:00 | 2016-11-04 12:00 | 56 |  | as late as possible | Jorge |
| 58 | 7.4 | Validar processo | 5d | 2016-11-04 12:00 | 2016-11-11 12:00 | 57 |  | as late as possible | Segurança da Informação; Dono do Processo |
| 59 | 7.5 | Ajustar | 0.5d | 2016-11-11 12:00 | 2016-11-11 17:00 | 58 |  | as late as possible | Tânia |
| 60 | 7.6 | Publicar no Confluence | 1d | 2017-02-08 08:00 | 2017-02-08 17:00 | 59 | 5600d | as late as possible | André |
| 61 | 7.7 | Validar publicação | 1d | 2017-02-09 08:00 | 2017-02-09 17:00 | 60 |  | as late as possible | Jorge |
| 62 | 7.8 | Criar processo no Jira (workflow e dashboard) | 2d | 2016-11-14 08:00 | 2016-11-16 17:00 | 59 |  | as late as possible | Jorge |
| 63 | 7.9 | Validar processo no Jira | 0.5d | 2016-11-17 08:00 | 2016-11-17 12:00 | 62 |  | as late as possible | Dono do Processo; Segurança da Informação |
| 64 | 7.10 | Ajustar processo no Jira | 0.5d | 2016-11-17 12:00 | 2016-11-17 17:00 | 63 |  | as late as possible | Jorge |
| 65 | 7.11 | Criar material de treinamento | 0.5d | 2016-11-18 08:00 | 2016-11-18 12:00 | 64 |  | as late as possible | Tânia |
| 66 | 7.12 | Validar material de treinamento | 0.5d | 2016-11-18 12:00 | 2016-11-18 17:00 | 65 |  | as late as possible | Jorge |
| 67 | 7.13 | Ajustar material de treinamento | 0.5d | 2016-11-21 08:00 | 2016-11-21 12:00 | 66 |  | as late as possible | Tânia |
| 68 | 7.14 | Realizar treinamento | 0.5d | 2016-11-21 12:00 | 2016-11-21 17:00 | 67 |  | as late as possible | Tânia |
| 69 | 8 | **AI1 – Identificar Soluções Automatizadas** | 53d | 2016-11-22 08:00 | 2017-02-09 17:00 |  |  |  |  |
| 70 | 8.1 | Entender Gaps e os AS IS | 0.5d | 2016-11-22 08:00 | 2016-11-22 12:00 | 68 |  | as late as possible | Segurança da Informação; Tânia |
| 71 | 8.2 | Mapear (escopo, objetivo, conceitos, diretrizes, fluxo macro, fluxo detalhado, matriz raci, guia rápido e apresentação) | 1d | 2016-11-22 12:00 | 2016-11-23 12:00 | 70 |  | as late as possible | Tânia |
| 72 | 8.3 | Validar processo | 0.5d | 2016-11-23 12:00 | 2016-11-23 17:00 | 71 |  | as late as possible | Jorge |
| 73 | 8.4 | Validar processo | 0.5d | 2016-11-24 08:00 | 2016-11-24 12:00 | 72 |  | as late as possible | Dono do Processo; Segurança da Informação |
| 74 | 8.5 | Ajustar | 0.5d | 2016-11-24 12:00 | 2016-11-24 17:00 | 73 |  | as late as possible | Tânia |
| 75 | 8.6 | Publicar no Confluence | 1d | 2017-02-08 08:00 | 2017-02-08 17:00 | 74 | 4800d | as late as possible | André |
| 76 | 8.7 | Validar publicação | 1d | 2017-02-09 08:00 | 2017-02-09 17:00 | 75 |  | as late as possible | Jorge |
| 77 | 8.8 | Realizar treinamento | 0.5d | 2016-11-25 08:00 | 2016-11-25 12:00 | 74 |  | as late as possible | Tânia |

| ID | WBS | Task | Duration | Start | Finish | Predecessors | Total slack | Constraint | Resources |
| --- | --- | --- | --- | --- | --- | --- | --- | --- | --- |
| 78 | 9 | **AI2 - Adquirir e manter aplicações de software** | 49.5d | 2016-11-25 12:00 | 2017-02-09 17:00 |  |  |  |  |
| 79 | 9.1 | Entender Gaps e os AS IS | 0.5d | 2016-11-25 12:00 | 2016-11-25 17:00 | 77 |  | as late as possible | Segurança da Informação; Tânia |
| 80 | 9.2 | Mapear (escopo, objetivo, conceitos, diretrizes, fluxo macro, fluxo detalhado, matriz raci, guia rápido e apresentação) | 1d | 2016-11-28 08:00 | 2016-11-28 17:00 | 79 |  | as late as possible | Tânia |
| 81 | 9.3 | Validar processo | 0.5d | 2016-11-29 08:00 | 2016-11-29 12:00 | 80 |  | as late as possible | Jorge |
| 82 | 9.4 | Validar processo | 0.5d | 2016-11-29 12:00 | 2016-11-29 17:00 | 81 |  | as late as possible | Dono do Processo; Segurança da Informação |
| 83 | 9.5 | Ajustar | 0.5d | 2016-11-30 08:00 | 2016-11-30 12:00 | 82 |  | as late as possible | Tânia |
| 84 | 9.6 | Publicar no Confluence | 1d | 2017-02-08 08:00 | 2017-02-08 17:00 | 83 | 4450d | as late as possible | André |
| 85 | 9.7 | Validar publicação | 1d | 2017-02-09 08:00 | 2017-02-09 17:00 | 84 |  | as late as possible | Jorge |
| 86 | 9.8 | Realizar treinamento | 0.5d | 2016-11-30 12:00 | 2016-11-30 17:00 | 83 |  | as late as possible | Tânia |
| 87 | 10 | **AI3 - Adquirir e manter infraestrutura tecnológica** | 46d | 2016-12-01 08:00 | 2017-02-09 17:00 |  |  |  |  |
| 88 | 10.1 | Entender Gaps e os AS IS | 0.5d | 2016-12-01 08:00 | 2016-12-01 12:00 | 86 |  | as late as possible | Segurança da Informação; Tânia |
| 89 | 10.2 | Mapear (escopo, objetivo, conceitos, diretrizes, fluxo macro, fluxo detalhado, matriz raci, guia rápido e apresentação) | 1d | 2016-12-01 12:00 | 2016-12-02 12:00 | 88 |  | as late as possible | Tânia |
| 90 | 10.3 | Validar processo | 0.5d | 2016-12-02 12:00 | 2016-12-02 17:00 | 89 |  | as late as possible | Jorge |
| 91 | 10.4 | Validar processo | 0.5d | 2016-12-05 08:00 | 2016-12-05 12:00 | 90 |  | as late as possible | Dono do Processo; Segurança da Informação |
| 92 | 10.5 | Ajustar | 0.5d | 2016-12-05 12:00 | 2016-12-05 17:00 | 91 |  | as late as possible | Tânia |
| 93 | 10.6 | Publicar no Confluence | 1d | 2017-02-09 08:00 | 2017-02-09 17:00 | 92 | 4200d | as late as possible | André |
| 94 | 10.7 | Validar publicação | 1d | 2017-02-09 08:00 | 2017-02-09 17:00 | 91 | 4250d | as late as possible | Jorge |
| 95 | 10.8 | Realizar treinamento | 0.5d | 2016-12-06 08:00 | 2016-12-06 12:00 | 92 |  | as late as possible | Tânia |
| 96 | 11 | **AI4 - Desenvolver e manter manuais de Sistemas** | 42.5d | 2016-12-06 12:00 | 2017-02-09 17:00 |  |  |  |  |
| 97 | 11.1 | Entender Gaps e os AS IS | 0.5d | 2016-12-06 12:00 | 2016-12-06 17:00 | 95 |  | as late as possible | Segurança da Informação; Tânia |
| 98 | 11.2 | Mapear (escopo, objetivo, conceitos, diretrizes, fluxo macro, fluxo detalhado, matriz raci, guia rápido e apresentação) | 1d | 2016-12-07 08:00 | 2016-12-07 17:00 | 97 |  | as late as possible | Tânia |
| 99 | 11.3 | Validar processo | 0.5d | 2016-12-08 08:00 | 2016-12-08 12:00 | 98 |  | as late as possible | Jorge |
| 100 | 11.4 | Validar processo | 0.5d | 2016-12-08 12:00 | 2016-12-08 17:00 | 99 |  | as late as possible | Dono do Processo; Segurança da Informação |
| 101 | 11.5 | Ajustar | 0.5d | 2016-12-09 08:00 | 2016-12-09 12:00 | 100 |  | as late as possible | Tânia |
| 102 | 11.6 | Publicar no Confluence | 1d | 2017-02-08 08:00 | 2017-02-08 17:00 | 101 | 3750d | as late as possible | André |
| 103 | 11.7 | Validar publicação | 1d | 2017-02-09 08:00 | 2017-02-09 17:00 | 102 |  | as late as possible | Jorge |
| 104 | 11.8 | Realizar treinamento | 0.5d | 2016-12-09 12:00 | 2016-12-09 17:00 | 101 |  | as late as possible | Tânia |

| ID | WBS | Task | Duration | Start | Finish | Predecessors | Total slack | Constraint | Resources |
| --- | --- | --- | --- | --- | --- | --- | --- | --- | --- |
| 105 | 12 | **AI7 - Gerenciamento, Instalação e Homologação** | 39d | 2016-12-12 08:00 | 2017-02-09 17:00 |  |  |  |  |
| 106 | 12.1 | Entender Gaps e os AS IS | 0.5d | 2016-12-12 08:00 | 2016-12-12 13:00 | 104 |  |  | Segurança da Informação; Tânia |
| 107 | 12.2 | Mapear (escopo, objetivo, conceitos, diretrizes, fluxo macro, fluxo detalhado, matriz raci, guia rápido e apresentação) | 1d | 2016-12-12 12:00 | 2016-12-13 12:00 | 106 |  | as late as possible | Tânia |
| 108 | 12.3 | Validar processo | 0.5d | 2016-12-13 12:00 | 2016-12-13 17:00 | 107 |  | as late as possible | Jorge |
| 109 | 12.4 | Validar processo | 0.5d | 2016-12-14 08:00 | 2016-12-14 12:00 | 108 |  | as late as possible | Dono do Processo; Segurança da Informação |
| 110 | 12.5 | Ajustar | 0.5d | 2016-12-14 12:00 | 2016-12-14 17:00 | 109 |  | as late as possible | Tânia |
| 111 | 12.6 | Publicar no Confluence | 1d | 2017-02-08 08:00 | 2017-02-08 17:00 | 110 | 3400d | as late as possible | André |
| 112 | 12.7 | Validar publicação | 1d | 2017-02-09 08:00 | 2017-02-09 17:00 | 111 |  | as late as possible | Jorge |
| 113 | 12.8 | Realizar treinamento | 0.5d | 2016-12-15 08:00 | 2016-12-15 12:00 | 110 |  | as late as possible | Tânia |
| 114 | 13 | **DS1 - Definir e Gerenciar Níveis de Serviço** | 35.5d | 2016-12-15 13:00 | 2017-02-09 17:00 |  |  |  |  |
| 115 | 13.1 | Entender Gaps e os AS IS | 0.5d | 2016-12-15 13:00 | 2016-12-15 17:00 | 113 |  |  | Segurança da Informação; Tânia |
| 116 | 13.2 | Mapear (escopo, objetivo, conceitos, diretrizes, fluxo macro, fluxo detalhado, matriz raci, guia rápido e apresentação) | 1d | 2016-12-16 08:00 | 2016-12-16 17:00 | 115 |  | as late as possible | Tânia |
| 117 | 13.3 | Validar processo | 0.5d | 2016-12-19 08:00 | 2016-12-19 12:00 | 116 |  | as late as possible | Jorge |
| 118 | 13.4 | Validar processo | 0.5d | 2016-12-19 12:00 | 2016-12-19 17:00 | 117 |  | as late as possible | Dono do Processo; Segurança da Informação |
| 119 | 13.5 | Ajustar | 0.5d | 2016-12-20 08:00 | 2016-12-20 12:00 | 118 |  | as late as possible | Tânia |
| 120 | 13.6 | Publicar no Confluence | 1d | 2017-02-08 08:00 | 2017-02-08 17:00 | 119 | 3050d | as late as possible | André |
| 121 | 13.7 | Validar publicação | 1d | 2017-02-09 08:00 | 2017-02-09 17:00 | 120 |  | as late as possible | Jorge |
| 122 | 13.8 | Realizar treinamento | 0.5d | 2016-12-20 12:00 | 2016-12-20 17:00 | 119 |  | as late as possible | Tânia |
| 123 | 14 | **DS2 - Gerenciar Serviços de Terceiros** | 5d | 2016-12-21 08:00 | 2017-01-03 17:00 |  | 2700d |  |  |
| 124 | 14.1 | Entender Gaps e os AS IS | 0.5d | 2016-12-21 08:00 | 2016-12-21 13:00 | 122 |  |  | Segurança da Informação; Tânia |
| 125 | 14.2 | Mapear (escopo, objetivo, conceitos, diretrizes, fluxo macro, fluxo detalhado, matriz raci, guia rápido e apresentação) | 1d | 2016-12-21 13:00 | 2016-12-22 13:00 | 124 |  |  | Tânia |
| 126 | 14.3 | Validar processo | 0.5d | 2016-12-22 13:00 | 2016-12-22 17:00 | 125 |  |  | Jorge |
| 127 | 14.4 | Validar processo | 0.5d | 2016-12-23 08:00 | 2016-12-23 13:00 | 126 |  |  | Dono do Processo; Segurança da Informação |
| 128 | 14.5 | Ajustar | 0.5d | 2016-12-23 13:00 | 2016-12-23 17:00 | 127 |  |  | Tânia |
| 129 | 14.6 | Publicar no Confluence | 1d | 2017-01-02 08:00 | 2017-01-02 17:00 | 128 | 2700d |  | André |
| 130 | 14.7 | Validar publicação | 1d | 2017-01-03 08:00 | 2017-01-03 17:00 | 129 | 2700d |  | Jorge |
| 131 | 14.8 | Realizar treinamento | 0.5d | 2017-01-02 08:00 | 2017-01-02 12:00 | 128 |  | as late as possible | Tânia |

| ID | WBS | Task | Duration | Start | Finish | Predecessors | Total slack | Resources |
| --- | --- | --- | --- | --- | --- | --- | --- | --- |
| 132 | 15 | **DS5.5 - Assegurar Segurança de Sistemas** | 5d | 2017-01-02 13:00 | 2017-01-09 13:00 |  | 2350d |  |
| 133 | 15.1 | Entender Gaps e os AS IS | 0.5d | 2017-01-02 13:00 | 2017-01-02 17:00 | 131 |  | Segurança da Informação; Tânia |
| 134 | 15.2 | Mapear (escopo, objetivo, conceitos, diretrizes, fluxo macro, fluxo detalhado, matriz raci, guia rápido e apresentação) | 1d | 2017-01-03 08:00 | 2017-01-03 17:00 | 133 |  | Tânia |
| 135 | 15.3 | Validar processo | 0.5d | 2017-01-04 08:00 | 2017-01-04 13:00 | 134 |  | Jorge |
| 136 | 15.4 | Validar processo | 0.5d | 2017-01-04 13:00 | 2017-01-04 17:00 | 135 |  | Dono do Processo; Segurança da Informação |
| 137 | 15.5 | Ajustar | 0.5d | 2017-01-05 08:00 | 2017-01-05 13:00 | 136 |  | Tânia |
| 138 | 15.6 | Publicar no Confluence | 1d | 2017-01-05 13:00 | 2017-01-06 13:00 | 137 | 2350d | André |
| 139 | 15.7 | Validar publicação | 1d | 2017-01-06 13:00 | 2017-01-09 13:00 | 138 | 2350d | Jorge |
| 140 | 15.8 | Realizar treinamento | 0.5d | 2017-01-05 13:00 | 2017-01-05 17:00 | 137 |  | Tânia |
| 141 | 16 | **DS5.8 - Gestão de chaves criptográficas** | 5d | 2017-01-06 08:00 | 2017-01-12 17:00 |  | 2000d |  |
| 142 | 16.1 | Entender Gaps e os AS IS | 0.5d | 2017-01-06 08:00 | 2017-01-06 13:00 | 140 |  | Segurança da Informação; Tânia |
| 143 | 16.2 | Mapear (escopo, objetivo, conceitos, diretrizes, fluxo macro, fluxo detalhado, matriz raci, guia rápido e apresentação) | 1d | 2017-01-06 13:00 | 2017-01-09 13:00 | 142 |  | Tânia |
| 144 | 16.3 | Validar processo | 0.5d | 2017-01-09 13:00 | 2017-01-09 17:00 | 143 |  | Jorge |
| 145 | 16.4 | Validar processo | 0.5d | 2017-01-10 08:00 | 2017-01-10 13:00 | 144 |  | Dono do Processo; Segurança da Informação |
| 146 | 16.5 | Ajustar | 0.5d | 2017-01-10 13:00 | 2017-01-10 17:00 | 145 |  | Tânia |
| 147 | 16.6 | Publicar no Confluence | 1d | 2017-01-11 08:00 | 2017-01-11 17:00 | 146 | 2000d | André |
| 148 | 16.7 | Validar publicação | 1d | 2017-01-12 08:00 | 2017-01-12 17:00 | 147 | 2000d | Jorge |
| 149 | 16.8 | Realizar treinamento | 0.5d | 2017-01-11 08:00 | 2017-01-11 13:00 | 146 |  | Tânia |
| 150 | 17 | **DS5.10 - Administração de Firewall** | 5d | 2017-01-11 13:00 | 2017-01-18 13:00 |  | 1650d |  |
| 151 | 17.1 | Entender Gaps e os AS IS | 0.5d | 2017-01-11 13:00 | 2017-01-11 17:00 | 149 |  | Segurança da Informação; Tânia |
| 152 | 17.2 | Mapear (escopo, objetivo, conceitos, diretrizes, fluxo macro, fluxo detalhado, matriz raci, guia rápido e apresentação) | 1d | 2017-01-12 08:00 | 2017-01-12 17:00 | 151 |  | Tânia |
| 153 | 17.3 | Validar processo | 0.5d | 2017-01-13 08:00 | 2017-01-13 13:00 | 152 |  | Jorge |
| 154 | 17.4 | Validar processo | 0.5d | 2017-01-13 13:00 | 2017-01-13 17:00 | 153 |  | Dono do Processo; Segurança da Informação |
| 155 | 17.5 | Ajustar | 0.5d | 2017-01-16 08:00 | 2017-01-16 13:00 | 154 |  | Tânia |
| 156 | 17.6 | Publicar no Confluence | 1d | 2017-01-16 13:00 | 2017-01-17 13:00 | 155 | 1650d | André |
| 157 | 17.7 | Validar publicação | 1d | 2017-01-17 13:00 | 2017-01-18 13:00 | 156 | 1650d | Jorge |
| 158 | 17.8 | Realizar treinamento | 0.5d | 2017-01-16 13:00 | 2017-01-16 17:00 | 155 |  | Tânia |

| ID | WBS | Task | Duration | Start | Finish | Predecessors | Total slack | Resources |
| --- | --- | --- | --- | --- | --- | --- | --- | --- |
| 159 | 18 | **DS5.11 - Gestão de Certificados Digitais** | 5d | 2017-01-17 08:00 | 2017-01-23 17:00 |  | 1300d |  |
| 160 | 18.1 | Entender Gaps e os AS IS | 0.5d | 2017-01-17 08:00 | 2017-01-17 13:00 | 158 |  | Segurança da Informação; Tânia |
| 161 | 18.2 | Mapear (escopo, objetivo, conceitos, diretrizes, fluxo macro, fluxo detalhado, matriz raci, guia rápido e apresentação) | 1d | 2017-01-17 13:00 | 2017-01-18 13:00 | 160 |  | Tânia |
| 162 | 18.3 | Validar processo | 0.5d | 2017-01-18 13:00 | 2017-01-18 17:00 | 161 |  | Jorge |
| 163 | 18.4 | Validar processo | 0.5d | 2017-01-19 08:00 | 2017-01-19 13:00 | 162 |  | Dono do Processo; Segurança da Informação |
| 164 | 18.5 | Ajustar | 0.5d | 2017-01-19 13:00 | 2017-01-19 17:00 | 163 |  | Tânia |
| 165 | 18.6 | Publicar no Confluence | 1d | 2017-01-20 08:00 | 2017-01-20 17:00 | 164 | 1300d | André |
| 166 | 18.7 | Validar publicação | 1d | 2017-01-23 08:00 | 2017-01-23 17:00 | 165 | 1300d | Jorge |
| 167 | 18.8 | Realizar treinamento | 0.5d | 2017-01-20 08:00 | 2017-01-20 13:00 | 164 |  | Tânia |
| 168 | 19 | **DS 11 - Gerenciar Copias de Segurança** | 5d | 2017-01-20 13:00 | 2017-01-27 13:00 |  | 950d |  |
| 169 | 19.1 | Entender Gaps e os AS IS | 0.5d | 2017-01-20 13:00 | 2017-01-20 17:00 | 167 |  | Segurança da Informação; Tânia |
| 170 | 19.2 | Mapear (escopo, objetivo, conceitos, diretrizes, fluxo macro, fluxo detalhado, matriz raci, guia rápido e apresentação) | 1d | 2017-01-23 08:00 | 2017-01-23 17:00 | 169 |  | Tânia |
| 171 | 19.3 | Validar processo | 0.5d | 2017-01-24 08:00 | 2017-01-24 13:00 | 170 |  | Jorge |
| 172 | 19.4 | Validar processo | 0.5d | 2017-01-24 13:00 | 2017-01-24 17:00 | 171 |  | Dono do Processo; Segurança da Informação |
| 173 | 19.5 | Ajustar | 0.5d | 2017-01-25 08:00 | 2017-01-25 13:00 | 172 |  | Tânia |
| 174 | 19.6 | Publicar no Confluence | 1d | 2017-01-25 13:00 | 2017-01-26 13:00 | 173 | 950d | André |
| 175 | 19.7 | Validar publicação | 1d | 2017-01-26 13:00 | 2017-01-27 13:00 | 174 | 950d | Jorge |
| 176 | 19.8 | Realizar treinamento | 0.5d | 2017-01-25 13:00 | 2017-01-25 17:00 | 173 |  | Tânia |
| 177 | 20 | **DS12 - Gerenciar Instalações Físicas** | 11d | 2017-01-26 08:00 | 2017-02-09 17:00 |  |  |  |
| 178 | 20.1 | Entender Gaps e os AS IS | 0.5d | 2017-01-26 08:00 | 2017-01-26 13:00 | 176 |  | Segurança da Informação; Tânia |
| 179 | 20.2 | Mapear (escopo, objetivo, conceitos, diretrizes, fluxo macro, fluxo detalhado, matriz raci, guia rápido e apresentação) | 1d | 2017-01-26 13:00 | 2017-01-27 13:00 | 178 |  | Tânia |
| 180 | 20.3 | Validar processo | 0.5d | 2017-01-27 13:00 | 2017-01-27 17:00 | 179 |  | Jorge |
| 181 | 20.4 | Validar processo | 0.5d | 2017-01-30 08:00 | 2017-01-30 13:00 | 180 |  | Dono do Processo; Segurança da Informação |
| 182 | 20.5 | Ajustar | 0.5d | 2017-01-30 13:00 | 2017-01-30 17:00 | 181 |  | Tânia |
| 183 | 20.6 | Publicar no Confluence | 1d | 2017-01-31 08:00 | 2017-01-31 17:00 | 182 | 600d | André |
| 184 | 20.7 | Validar publicação | 1d | 2017-02-01 08:00 | 2017-02-01 17:00 | 183 | 600d | Jorge |
| 185 | 20.8 | Realizar treinamento | 0.5d | 2017-01-31 08:00 | 2017-01-31 13:00 | 182 |  | Tânia |

| ID | WBS | Task | Duration | Start | Finish | Predecessors | Total slack | Resources |
| --- | --- | --- | --- | --- | --- | --- | --- | --- |
| 186 | 20.9 | **Gerencimento de Problemas** | 7.5d | 2017-01-31 13:00 | 2017-02-09 17:00 |  |  |  |
| 187 | 20.9.1 | Entender Gaps e os AS IS | 0.5d | 2017-01-31 13:00 | 2017-01-31 17:00 | 185 |  | Segurança da Informação; Tânia |
| 188 | 20.9.2 | Mapear (escopo, objetivo, conceitos, diretrizes, fluxo macro, fluxo detalhado, matriz raci e guia rápido) | 1d | 2017-02-01 08:00 | 2017-02-01 17:00 | 187 |  | Tânia |
| 189 | 20.9.3 | Validar processo | 0.5d | 2017-02-02 08:00 | 2017-02-02 13:00 | 188 |  | Jorge |
| 190 | 20.9.4 | Validar processo | 0.5d | 2017-02-02 13:00 | 2017-02-02 17:00 | 189 |  | Dono do Processo; Segurança da Informação |
| 191 | 20.9.5 | Ajustar | 0.5d | 2017-02-03 08:00 | 2017-02-03 13:00 | 190 | 250d | Tânia |
| 192 | 20.9.6 | Publicar no Confluence | 1d | 2017-02-03 13:00 | 2017-02-06 13:00 | 191 | 250d | André |
| 193 | 20.9.7 | Validar publicação | 1d | 2017-02-06 13:00 | 2017-02-07 13:00 | 192 | 250d | Jorge |
| 194 | 20.9.8 | Criar processo no Jira (workflow e dashboard) | 2d | 2017-02-03 08:00 | 2017-02-06 17:00 | 190 |  | Jorge |
| 195 | 20.9.9 | Validar processo no Jira | 0.5d | 2017-02-07 08:00 | 2017-02-07 13:00 | 194 |  | Dono do Processo; Segurança da Informação |
| 196 | 20.9.10 | Ajustar processo no Jira | 0.5d | 2017-02-07 13:00 | 2017-02-07 17:00 | 195 |  | Jorge |
| 197 | 20.9.11 | Criar material de treinamento | 0.5d | 2017-02-08 08:00 | 2017-02-08 13:00 | 196 |  | Tânia |
| 198 | 20.9.12 | Validar material de treinamento | 0.5d | 2017-02-08 13:00 | 2017-02-08 17:00 | 197 |  | Jorge |
| 199 | 20.9.13 | Ajustar material de treinamento | 0.5d | 2017-02-09 08:00 | 2017-02-09 13:00 | 198 |  | Tânia |
| 200 | 20.9.14 | Realizar treinamento | 0.5d | 2017-02-09 13:00 | 2017-02-09 17:00 | 199 |  | Tânia |
