# Mapeamento dos Processos TI

Schedule from ProjectLibre, 2016-10-19 to 2017-01-31.

## Calendars

- Padrão: Mon-Fri 08:00-12:00, 13:00-17:00; Sat-Sun off. Exceptions (off unless hours are given): 2016-11-01 to 2016-11-02, 2016-11-14 to 2016-11-15, 2016-12-25 to 2016-12-30.

## Resources

| Resource | Group |
| --- | --- |
| Não atribuído |  |
| Tânia | Chacon |
| André | Chacon |
| Jorge | Chacon |
| Segurança da Informação | Smiles |
| Dono do Processo | Smiles |

## Schedule

| ID | WBS | Task | Duration | Start | Finish | Predecessors | Total slack | Constraint | Resources |
| --- | --- | --- | --- | --- | --- | --- | --- | --- | --- |
| 1 | 1 | **Gerenciamento de Incidentes de Segurança da Informação** | 67.5d | 2016-10-19 08:00 | 2017-01-31 12:00 |  |  | start no earlier than 2016-10-19 07:00 |  |
| 2 | 1.1 | Criar processo no Jira (workflow e dashboard) | 3d | 2016-10-19 08:00 | 2016-10-21 17:00 |  |  | as late as possible | Jorge |
| 3 | 1.2 | Validar processo no Jira | 0.5d | 2017-01-09 08:00 | 2017-01-09 12:00 | 2 | 4800d | as late as possible | Dono do Processo; Segurança da Informação |
| 4 | 1.3 | Ajustar processo no Jira | 1d | 2017-01-09 12:00 | 2017-01-10 12:00 | 3 |  | as late as possible | Jorge |
| 5 | 1.4 | Criar material de treinamento | 1d | 2017-01-10 12:00 | 2017-01-11 12:00 | 4 |  | as late as possible | Tânia |
| 6 | 1.5 | Validar material de treinamento | 0.5d | 2017-01-11 12:00 | 2017-01-11 17:00 | 5 |  | as late as possible | Jorge |
| 7 | 1.6 | Ajustar material de treinamento | 0.5d | 2017-01-30 12:00 | 2017-01-30 17:00 | 6 | 1250d | as late as possible | Tânia |
| 8 | 1.7 | Realizar treinamento | 0.5d | 2017-01-31 08:00 | 2017-01-31 12:00 | 7 |  | as late as possible | Tânia |
| 9 | 2 | **DS5.9.A - Gestão de Antivírus** | 19.5d | 2017-01-04 08:00 | 2017-01-31 12:00 |  |  |  |  |
| 10 | 2.1 | Entender Gaps e os AS IS | 0.5d | 2017-01-04 08:00 | 2017-01-04 12:00 | 2 | 4500d | as late as possible | Tânia; Segurança da Informação |
| 11 | 2.2 | Mapear (escopo, objetivo, conceitos, diretrizes, fluxo macro, fluxo detalhado, matriz raci, guia rápido e apresentação) | 2d | 2017-01-04 12:00 | 2017-01-06 12:00 | 10 |  | as late as possible | Tânia |
| 12 | 2.3 | Validar processo | 0.5d | 2017-01-06 12:00 | 2017-01-06 17:00 | 11 |  | as late as possible | Jorge |
| 13 | 2.4 | Validar processo | 0.5d | 2017-01-09 08:00 | 2017-01-09 12:00 | 12 |  | as late as possible | Segurança da Informação; Dono do Processo |
| 14 | 2.5 | Ajustar | 0.5d | 2017-01-09 12:00 | 2017-01-09 17:00 | 13 |  | as late as possible | Tânia |
| 15 | 2.6 | Publicar no Confluence | 1d | 2017-01-27 12:00 | 2017-01-30 12:00 | 14 | 1350d | as late as possible | André |
| 16 | 2.7 | Validar publicação | 1d | 2017-01-30 12:00 | 2017-01-31 12:00 | 15 |  | as late as possible | Jorge |
| 17 | 2.8 | Realizar treinamento | 0.5d | 2017-01-10 08:00 | 2017-01-10 12:00 | 14 |  | as late as possible | Tânia |
| 18 | 3 | **DS5.9.B – Administrar Patches - Servidores das Bases** | 15d | 2017-01-10 12:00 | 2017-01-31 12:00 |  |  |  |  |
| 19 | 3.1 | Entender Gaps e os AS IS | 0.5d | 2017-01-10 12:00 | 2017-01-10 17:00 | 17 |  | as late as possible | Segurança da Informação; Tânia |
| 20 | 3.2 | Mapear (escopo, objetivo, conceitos, diretrizes, fluxo macro, fluxo detalhado, matriz raci, guia rápido e apresentação) | 2d | 2017-01-11 08:00 | 2017-01-12 17:00 | 19 |  | as late as possible | Tânia |
| 21 | 3.3 | Validar processo | 0.5d | 2017-01-13 08:00 | 2017-01-13 12:00 | 20 |  | as late as possible | Jorge |
| 22 | 3.4 | Validar processo | 0.5d | 2017-01-13 12:00 | 2017-01-13 17:00 | 21 |  | as late as possible | Dono do Processo; Segurança da Informação |
| 23 | 3.5 | Ajustar | 0.5d | 2017-01-16 08:00 | 2017-01-16 12:00 | 22 |  | as late as possible | Tânia |
| 24 | 3.6 | Publicar no Confluence | 1d | 2017-01-27 12:00 | 2017-01-30 12:00 | 23 | 900d | as late as possible | André |
| 25 | 3.7 | Validar publicação | 1d | 2017-01-30 12:00 | 2017-01-31 12:00 | 24 |  | as late as possible | Jorge |
| 26 | 3.8 | Realizar treinamento | 0.5d | 2017-01-16 12:00 | 2017-01-16 17:00 | 23 |  | as late as possible | Tânia |

| ID | WBS | Task | Duration | Start | Finish | Predecessors | Total slack | Constraint | Resources |
| --- | --- | --- | --- | --- | --- | --- | --- | --- | --- |
| 27 | 4 | **PO2 - Definir Arquitetura da Informação** | 10.5d | 2017-01-17 08:00 | 2017-01-31 12:00 |  |  |  |  |
| 28 | 4.1 | Entender Gaps e os AS IS | 0.5d | 2017-01-17 08:00 | 2017-01-17 12:00 | 26 |  | as late as possible | Segurança da Informação; Tânia |
| 29 | 4.2 | Mapear (escopo, objetivo, conceitos, diretrizes, fluxo macro, fluxo detalhado, matriz raci, guia rápido e apresentação) | 2d | 2017-01-17 12:00 | 2017-01-19 12:00 | 28 |  | as late as possible | Tânia |
| 30 | 4.3 | Validar processo | 0.5d | 2017-01-19 12:00 | 2017-01-19 17:00 | 29 |  | as late as possible | Jorge |
| 31 | 4.4 | Validar processo | 0.5d | 2017-01-20 08:00 | 2017-01-20 12:00 | 30 |  | as late as possible | Dono do Processo; Segurança da Informação |
| 32 | 4.5 | Ajustar | 0.5d | 2017-01-20 12:00 | 2017-01-20 17:00 | 31 |  | as late as possible | Tânia |
| 33 | 4.6 | Publicar no Confluence | 2d | 2017-01-26 12:00 | 2017-01-30 12:00 | 32 | 350d | as late as possible | André |
| 34 | 4.7 | Validar publicação | 1d | 2017-01-30 12:00 | 2017-01-31 12:00 | 33 |  | as late as possible | Jorge |
| 35 | 4.8 | Realizar treinamento | 0.5d | 2017-01-23 08:00 | 2017-01-23 12:00 | 32 |  | as late as possible | Tânia |
| 36 | 5 | **DS03 - Gerenciar o Desempenho e Capacidade** | 13.5d | 2017-01-12 08:00 | 2017-01-31 12:00 |  |  |  |  |
| 37 | 5.1 | Entender Gaps e os AS IS | 0.5d | 2017-01-12 08:00 | 2017-01-12 12:00 | 6 |  | as late as possible | Segurança da Informação; Jorge |
| 38 | 5.2 | Mapear (escopo, objetivo, conceitos, diretrizes, fluxo macro, fluxo detalhado, matriz raci, guia rápido e apresentação) | 2d | 2017-01-12 12:00 | 2017-01-16 12:00 | 37 |  | as late as possible | Jorge |
| 39 | 5.3 | Validar processo | 0.5d | 2017-01-16 12:00 | 2017-01-16 17:00 | 38 |  | as late as possible | Dono do Processo; Segurança da Informação |
| 40 | 5.4 | Ajustar | 0.5d | 2017-01-17 08:00 | 2017-01-17 12:00 | 39 |  | as late as possible | Jorge |
| 41 | 5.5 | Publicar no Confluence | 1d | 2017-01-27 12:00 | 2017-01-30 12:00 | 40 | 800d | as late as possible | André |
| 42 | 5.6 | Validar publicação | 1d | 2017-01-30 12:00 | 2017-01-31 12:00 | 41 |  | as late as possible | Jorge |
| 43 | 5.7 | Realizar treinamento | 0.5d | 2017-01-17 12:00 | 2017-01-17 17:00 | 40 |  | as late as possible | Jorge |
| 44 | 6 | **M01 - Monitorar Processos** | 6d | 2017-01-23 12:00 | 2017-01-31 12:00 |  |  |  |  |
| 45 | 6.1 | Entender Gaps e os AS IS | 0.5d | 2017-01-23 12:00 | 2017-01-23 17:00 | 35 |  | as late as possible | Segurança da Informação; Tânia |
| 46 | 6.2 | Mapear (escopo, objetivo, conceitos, diretrizes, fluxo macro, fluxo detalhado, matriz raci, guia rápido e apresentação) | 2d | 2017-01-24 08:00 | 2017-01-25 17:00 | 45 |  | as late as possible | Tânia |
| 47 | 6.3 | Validar processo | 0.5d | 2017-01-26 08:00 | 2017-01-26 12:00 | 46 |  | as late as possible | Jorge |
| 48 | 6.4 | Validar processo | 0.5d | 2017-01-26 12:00 | 2017-01-26 17:00 | 47 |  | as late as possible | Dono do Processo; Segurança da Informação |
| 49 | 6.5 | Ajustar | 0.5d | 2017-01-27 08:00 | 2017-01-27 12:00 | 48 |  | as late as possible | Tânia |
| 50 | 6.6 | Publicar no Confluence | 1d | 2017-01-27 12:00 | 2017-01-30 12:00 | 49 |  | as late as possible | André |
| 51 | 6.7 | Validar publicação | 1d | 2017-01-30 12:00 | 2017-01-31 12:00 | 50 |  | as late as possible | Jorge |
| 52 | 6.8 | Realizar treinamento | 0.5d | 2017-01-31 08:00 | 2017-01-31 12:00 | 49 | 150d | as late as possible | Tânia |

| ID | WBS | Task | Duration | Start | Finish | Predecessors | Total slack | Constraint | Resources |
| --- | --- | --- | --- | --- | --- | --- | --- | --- | --- |
| 53 | 7 | **AI6 - Gerenciamento de Mudanças** | 64.5d | 2016-10-24 08:00 | 2017-01-31 12:00 |  |  |  |  |
| 54 | 7.1 | Entender Gaps e os AS IS | 0.5d | 2016-10-24 08:00 | 2016-10-24 12:00 | 2 |  | as late as possible | Segurança da Informação; Tânia |
| 55 | 7.2 | Mapear (escopo, objetivo, conceitos, diretrizes, fluxo macro, fluxo detalhado, matriz raci e guia rápido) | 2d | 2016-10-24 12:00 | 2016-10-26 12:00 | 54 |  | as late as possible | Tânia |
| 56 | 7.3 | Validar processo | 0.5d | 2016-10-26 12:00 | 2016-10-26 17:00 | 55 |  | as late as possible | Jorge |
| 57 | 7.4 | Validar processo | 5d | 2016-10-27 08:00 | 2016-11-03 17:00 | 56 |  | as late as possible | Segurança da Informação; Dono do Processo |
| 58 | 7.5 | Ajustar | 0.5d | 2016-11-04 08:00 | 2016-11-04 12:00 | 57 |  | as late as possible | Tânia |
| 59 | 7.6 | Publicar no Confluence | 1d | 2017-01-27 12:00 | 2017-01-30 12:00 | 58 | 5400d | as late as possible | André |
| 60 | 7.7 | Validar publicação | 1d | 2017-01-30 12:00 | 2017-01-31 12:00 | 59 |  | as late as possible | Jorge |
| 61 | 7.8 | Criar processo no Jira (workflow e dashboard) | 3d | 2016-11-04 12:00 | 2016-11-09 12:00 | 58 |  | as late as possible | Jorge |
| 62 | 7.9 | Validar processo no Jira | 0.5d | 2016-11-09 12:00 | 2016-11-09 17:00 | 61 |  | as late as possible | Dono do Processo; Segurança da Informação |
| 63 | 7.10 | Ajustar processo no Jira | 0.5d | 2016-11-10 08:00 | 2016-11-10 12:00 | 62 |  | as late as possible | Jorge |
| 64 | 7.11 | Criar material de treinamento | 0.5d | 2016-11-10 12:00 | 2016-11-10 17:00 | 63 |  | as late as possible | Tânia |
| 65 | 7.12 | Validar material de treinamento | 0.5d | 2016-11-11 08:00 | 2016-11-11 12:00 | 64 |  | as late as possible | Jorge |
| 66 | 7.13 | Ajustar material de treinamento | 0.5d | 2016-11-11 12:00 | 2016-11-11 17:00 | 65 |  | as late as possible | Tânia |
| 67 | 7.14 | Realizar treinamento | 0.5d | 2016-11-14 08:00 | 2016-11-14 12:00 | 66 |  | as late as possible | Tânia |
| 68 | 8 | **AI1 – Identificar Soluções Automatizadas** | 50d | 2016-11-14 12:00 | 2017-01-31 12:00 |  |  |  |  |
| 69 | 8.1 | Entender Gaps e os AS IS | 0.5d | 2016-11-14 12:00 | 2016-11-14 17:00 | 67 |  | as late as possible | Segurança da Informação; Tânia |
| 70 | 8.2 | Mapear (escopo, objetivo, conceitos, diretrizes, fluxo macro, fluxo detalhado, matriz raci, guia rápido e apresentação) | 2d | 2016-11-16 08:00 | 2016-11-17 17:00 | 69 |  | as late as possible | Tânia |
| 71 | 8.3 | Validar processo | 0.5d | 2016-11-18 08:00 | 2016-11-18 12:00 | 70 |  | as late as possible | Jorge |
| 72 | 8.4 | Validar processo | 0.5d | 2016-11-18 12:00 | 2016-11-18 17:00 | 71 |  | as late as possible | Dono do Processo; Segurança da Informação |
| 73 | 8.5 | Ajustar | 0.5d | 2016-11-21 08:00 | 2016-11-21 12:00 | 72 |  | as late as possible | Tânia |
| 74 | 8.6 | Publicar no Confluence | 1d | 2017-01-27 12:00 | 2017-01-30 12:00 | 73 | 4400d | as late as possible | André |
| 75 | 8.7 | Validar publicação | 1d | 2017-01-30 12:00 | 2017-01-31 12:00 | 74 |  | as late as possible | Jorge |
| 76 | 8.8 | Realizar treinamento | 0.5d | 2016-11-21 12:00 | 2016-11-21 17:00 | 73 |  | as late as possible | Tânia |

| ID | WBS | Task | Duration | Start | Finish | Predecessors | Total slack | Constraint | Resources |
| --- | --- | --- | --- | --- | --- | --- | --- | --- | --- |
| 77 | 9 | **AI2 - Adquirir e manter aplicações de software** | 45.5d | 2016-11-22 08:00 | 2017-01-31 12:00 |  |  |  |  |
| 78 | 9.1 | Entender Gaps e os AS IS | 0.5d | 2016-11-22 08:00 | 2016-11-22 12:00 | 76 |  | as late as possible | Segurança da Informação; Tânia |
| 79 | 9.2 | Mapear (escopo, objetivo, conceitos, diretrizes, fluxo macro, fluxo detalhado, matriz raci, guia rápido e apresentação) | 2d | 2016-11-22 12:00 | 2016-11-24 12:00 | 78 |  | as late as possible | Tânia |
| 80 | 9.3 | Validar processo | 0.5d | 2016-11-24 12:00 | 2016-11-24 17:00 | 79 |  | as late as possible | Jorge |
| 81 | 9.4 | Validar processo | 0.5d | 2016-11-25 08:00 | 2016-11-25 12:00 | 80 |  | as late as possible | Dono do Processo; Segurança da Informação |
| 82 | 9.5 | Ajustar | 0.5d | 2016-11-25 12:00 | 2016-11-25 17:00 | 81 |  | as late as possible | Tânia |
| 83 | 9.6 | Publicar no Confluence | 1d | 2017-01-27 12:00 | 2017-01-30 12:00 | 82 | 3950d | as late as possible | André |
| 84 | 9.7 | Validar publicação | 1d | 2017-01-30 12:00 | 2017-01-31 12:00 | 83 |  | as late as possible | Jorge |
| 85 | 9.8 | Realizar treinamento | 0.5d | 2016-11-28 08:00 | 2016-11-28 12:00 | 82 |  | as late as possible | Tânia |
| 86 | 10 | **AI3 - Adquirir e manter infraestrutura tecnológica** | 41d | 2016-11-28 12:00 | 2017-01-31 12:00 |  |  |  |  |
| 87 | 10.1 | Entender Gaps e os AS IS | 0.5d | 2016-11-28 12:00 | 2016-11-28 17:00 | 85 |  | as late as possible | Segurança da Informação; Tânia |
| 88 | 10.2 | Mapear (escopo, objetivo, conceitos, diretrizes, fluxo macro, fluxo detalhado, matriz raci, guia rápido e apresentação) | 2d | 2016-11-29 08:00 | 2016-11-30 17:00 | 87 |  | as late as possible | Tânia |
| 89 | 10.3 | Validar processo | 0.5d | 2016-12-01 08:00 | 2016-12-01 12:00 | 88 |  | as late as possible | Jorge |
| 90 | 10.4 | Validar processo | 0.5d | 2016-12-01 12:00 | 2016-12-01 17:00 | 89 |  | as late as possible | Dono do Processo; Segurança da Informação |
| 91 | 10.5 | Ajustar | 0.5d | 2016-12-02 08:00 | 2016-12-02 12:00 | 90 |  | as late as possible | Tânia |
| 92 | 10.6 | Publicar no Confluence | 1d | 2017-01-30 12:00 | 2017-01-31 12:00 | 91 | 3600d | as late as possible | André |
| 93 | 10.7 | Validar publicação | 1d | 2017-01-30 12:00 | 2017-01-31 12:00 | 90 | 3650d | as late as possible | Jorge |
| 94 | 10.8 | Realizar treinamento | 0.5d | 2016-12-02 12:00 | 2016-12-02 17:00 | 91 |  | as late as possible | Tânia |
| 95 | 11 | **AI4 - Desenvolver e manter manuais de Sistemas** | 36.5d | 2016-12-05 08:00 | 2017-01-31 12:00 |  |  |  |  |
| 96 | 11.1 | Entender Gaps e os AS IS | 0.5d | 2016-12-05 08:00 | 2016-12-05 12:00 | 94 |  | as late as possible | Segurança da Informação; Tânia |
| 97 | 11.2 | Mapear (escopo, objetivo, conceitos, diretrizes, fluxo macro, fluxo detalhado, matriz raci, guia rápido e apresentação) | 2d | 2016-12-05 12:00 | 2016-12-07 12:00 | 96 |  | as late as possible | Tânia |
| 98 | 11.3 | Validar processo | 0.5d | 2016-12-07 12:00 | 2016-12-07 17:00 | 97 |  | as late as possible | Jorge |
| 99 | 11.4 | Validar processo | 0.5d | 2016-12-08 08:00 | 2016-12-08 12:00 | 98 |  | as late as possible | Dono do Processo; Segurança da Informação |
| 100 | 11.5 | Ajustar | 0.5d | 2016-12-08 12:00 | 2016-12-08 17:00 | 99 |  | as late as possible | Tânia |
| 101 | 11.6 | Publicar no Confluence | 1d | 2017-01-27 12:00 | 2017-01-30 12:00 | 100 | 3050d | as late as possible | André |
| 102 | 11.7 | Validar publicação | 1d | 2017-01-30 12:00 | 2017-01-31 12:00 | 101 |  | as late as possible | Jorge |
| 103 | 11.8 | Realizar treinamento | 0.5d | 2016-12-09 08:00 | 2016-12-09 12:00 | 100 |  | as late as possible | Tânia |

| ID | WBS | Task | Duration | Start | Finish | Predecessors | Total slack | Constraint | Resources |
| --- | --- | --- | --- | --- | --- | --- | --- | --- | --- |
| 104 | 12 | **AI7 - Gerenciamento, Instalação e Homologação** | 32d | 2016-12-09 13:00 | 2017-01-31 12:00 |  |  |  |  |
| 105 | 12.1 | Entender Gaps e os AS IS | 0.5d | 2016-12-09 13:00 | 2016-12-09 17:00 | 103 |  |  | Segurança da Informação; Tânia |
| 106 | 12.2 | Mapear (escopo, objetivo, conceitos, diretrizes, fluxo macro, fluxo detalhado, matriz raci, guia rápido e apresentação) | 2d | 2016-12-12 08:00 | 2016-12-13 17:00 | 105 |  | as late as possible | Tânia |
| 107 | 12.3 | Validar processo | 0.5d | 2016-12-14 08:00 | 2016-12-14 12:00 | 106 |  | as late as possible | Jorge |
| 108 | 12.4 | Validar processo | 0.5d | 2016-12-14 12:00 | 2016-12-14 17:00 | 107 |  | as late as possible | Dono do Processo; Segurança da Informação |
| 109 | 12.5 | Ajustar | 0.5d | 2016-12-15 08:00 | 2016-12-15 12:00 | 108 |  | as late as possible | Tânia |
| 110 | 12.6 | Publicar no Confluence | 1d | 2017-01-27 12:00 | 2017-01-30 12:00 | 109 | 2600d | as late as possible | André |
| 111 | 12.7 | Validar publicação | 1d | 2017-01-30 12:00 | 2017-01-31 12:00 | 110 |  | as late as possible | Jorge |
| 112 | 12.8 | Realizar treinamento | 0.5d | 2016-12-15 12:00 | 2016-12-15 17:00 | 109 |  | as late as possible | Tânia |
| 113 | 13 | **DS1 - Definir e Gerenciar Níveis de Serviço** | 9.5d | 2017-01-18 08:00 | 2017-01-31 12:00 |  |  |  |  |
| 114 | 13.1 | Entender Gaps e os AS IS | 0.5d | 2017-01-18 08:00 | 2017-01-18 13:00 | 43 |  |  | Jorge; Segurança da Informação |
| 115 | 13.2 | Mapear (escopo, objetivo, conceitos, diretrizes, fluxo macro, fluxo detalhado, matriz raci, guia rápido e apresentação) | 2d | 2017-01-18 12:00 | 2017-01-20 12:00 | 114 |  | as late as possible | Jorge |
| 116 | 13.3 | Validar processo | 0.5d | 2017-01-20 12:00 | 2017-01-20 17:00 | 115 |  | as late as possible | Dono do Processo; Segurança da Informação |
| 117 | 13.4 | Ajustar | 0.5d | 2017-01-23 08:00 | 2017-01-23 12:00 | 116 |  | as late as possible | Jorge |
| 118 | 13.5 | Publicar no Confluence | 1d | 2017-01-27 12:00 | 2017-01-30 12:00 | 117 | 400d | as late as possible | André |
| 119 | 13.6 | Validar publicação | 1d | 2017-01-30 12:00 | 2017-01-31 12:00 | 118 |  | as late as possible | Jorge |
| 120 | 13.7 | Realizar treinamento | 0.5d | 2017-01-23 12:00 | 2017-01-23 17:00 | 117 |  | as late as possible | Jorge |
| 121 | 14 | **DS2 - Gerenciar Serviços de Terceiros** | 5.5d | 2017-01-24 08:00 | 2017-01-31 13:00 |  |  |  |  |
| 122 | 14.1 | Entender Gaps e os AS IS | 0.5d | 2017-01-24 08:00 | 2017-01-24 13:00 | 120 |  |  | Jorge; Segurança da Informação |
| 123 | 14.2 | Mapear (escopo, objetivo, conceitos, diretrizes, fluxo macro, fluxo detalhado, matriz raci, guia rápido e apresentação) | 2d | 2017-01-24 13:00 | 2017-01-26 13:00 | 122 |  |  | Jorge |
| 124 | 14.3 | Validar processo | 0.5d | 2017-01-26 13:00 | 2017-01-26 17:00 | 123 |  |  | Dono do Processo; Segurança da Informação |
| 125 | 14.4 | Ajustar | 0.5d | 2017-01-27 08:00 | 2017-01-27 13:00 | 124 |  |  | Jorge |
| 126 | 14.5 | Publicar no Confluence | 1d | 2017-01-27 13:00 | 2017-01-30 13:00 | 125 |  |  | André |
| 127 | 14.6 | Validar publicação | 1d | 2017-01-30 13:00 | 2017-01-31 13:00 | 126 |  |  | Jorge |
| 128 | 14.7 | Realizar treinamento | 0.5d | 2017-01-31 08:00 | 2017-01-31 12:00 | 125 | 150d | as late as possible | Jorge |

| ID | WBS | Task | Duration | Start | Finish | Predecessors | Total slack | Resources |
| --- | --- | --- | --- | --- | --- | --- | --- | --- |
| 129 | 15 | **DS5.5 - Assegurar Segurança de Sistemas** | 6d | 2016-12-16 08:00 | 2016-12-23 17:00 |  | 2150d |  |
| 130 | 15.1 | Entender Gaps e os AS IS | 0.5d | 2016-12-16 08:00 | 2016-12-16 13:00 | 112 |  | Segurança da Informação; Tânia |
| 131 | 15.2 | Mapear (escopo, objetivo, conceitos, diretrizes, fluxo macro, fluxo detalhado, matriz raci, guia rápido e apresentação) | 2d | 2016-12-16 13:00 | 2016-12-20 13:00 | 130 |  | Tânia |
| 132 | 15.3 | Validar processo | 0.5d | 2016-12-20 13:00 | 2016-12-20 17:00 | 131 |  | Jorge |
| 133 | 15.4 | Validar processo | 0.5d | 2016-12-21 08:00 | 2016-12-21 13:00 | 132 |  | Dono do Processo; Segurança da Informação |
| 134 | 15.5 | Ajustar | 0.5d | 2016-12-21 13:00 | 2016-12-21 17:00 | 133 |  | Tânia |
| 135 | 15.6 | Publicar no Confluence | 1d | 2016-12-22 08:00 | 2016-12-22 17:00 | 134 | 2150d | André |
| 136 | 15.7 | Validar publicação | 1d | 2016-12-23 08:00 | 2016-12-23 17:00 | 135 | 2150d | Jorge |
| 137 | 15.8 | Realizar treinamento | 0.5d | 2016-12-22 08:00 | 2016-12-22 13:00 | 134 |  | Tânia |
| 138 | 16 | **DS5.8 - Gestão de chaves criptográficas** | 5d | 2016-12-22 13:00 | 2017-01-05 13:00 |  | 1800d |  |
| 139 | 16.1 | Entender Gaps e os AS IS | 0.5d | 2016-12-22 13:00 | 2016-12-22 17:00 | 137 |  | Segurança da Informação; Tânia |
| 140 | 16.2 | Mapear (escopo, objetivo, conceitos, diretrizes, fluxo macro, fluxo detalhado, matriz raci, guia rápido e apresentação) | 1d | 2016-12-23 08:00 | 2016-12-23 17:00 | 139 |  | Tânia |
| 141 | 16.3 | Validar processo | 0.5d | 2017-01-02 08:00 | 2017-01-02 13:00 | 140 |  | Jorge |
| 142 | 16.4 | Validar processo | 0.5d | 2017-01-02 13:00 | 2017-01-02 17:00 | 141 |  | Dono do Processo; Segurança da Informação |
| 143 | 16.5 | Ajustar | 0.5d | 2017-01-03 08:00 | 2017-01-03 13:00 | 142 |  | Tânia |
| 144 | 16.6 | Publicar no Confluence | 1d | 2017-01-03 13:00 | 2017-01-04 13:00 | 143 | 1800d | André |
| 145 | 16.7 | Validar publicação | 1d | 2017-01-04 13:00 | 2017-01-05 13:00 | 144 | 1800d | Jorge |
| 146 | 16.8 | Realizar treinamento | 0.5d | 2017-01-03 13:00 | 2017-01-03 17:00 | 143 |  | Tânia |
| 147 | 17 | **DS5.10 - Administração de Firewall** | 6d | 2017-01-04 08:00 | 2017-01-11 17:00 |  | 1350d |  |
| 148 | 17.1 | Entender Gaps e os AS IS | 0.5d | 2017-01-04 08:00 | 2017-01-04 13:00 | 146 |  | Segurança da Informação; Tânia |
| 149 | 17.2 | Mapear (escopo, objetivo, conceitos, diretrizes, fluxo macro, fluxo detalhado, matriz raci, guia rápido e apresentação) | 2d | 2017-01-04 13:00 | 2017-01-06 13:00 | 148 |  | Tânia |
| 150 | 17.3 | Validar processo | 0.5d | 2017-01-06 13:00 | 2017-01-06 17:00 | 149 |  | Jorge |
| 151 | 17.4 | Validar processo | 0.5d | 2017-01-09 08:00 | 2017-01-09 13:00 | 150 |  | Dono do Processo; Segurança da Informação |
| 152 | 17.5 | Ajustar | 0.5d | 2017-01-09 13:00 | 2017-01-09 17:00 | 151 |  | Tânia |
| 153 | 17.6 | Publicar no Confluence | 1d | 2017-01-10 08:00 | 2017-01-10 17:00 | 152 | 1350d | André |
| 154 | 17.7 | Validar publicação | 1d | 2017-01-11 08:00 | 2017-01-11 17:00 | 153 | 1350d | Jorge |
| 155 | 17.8 | Realizar treinamento | 0.5d | 2017-01-10 08:00 | 2017-01-10 13:00 | 152 |  | Tânia |

| ID | WBS | Task | Duration | Start | Finish | Predecessors | Total slack | Resources |
| --- | --- | --- | --- | --- | --- | --- | --- | --- |
| 156 | 18 | **DS5.11 - Gestão de Certificados Digitais** | 6d | 2017-01-10 13:00 | 2017-01-18 13:00 |  | 900d |  |
| 157 | 18.1 | Entender Gaps e os AS IS | 0.5d | 2017-01-10 13:00 | 2017-01-10 17:00 | 155 |  | Segurança da Informação; Tânia |
| 158 | 18.2 | Mapear (escopo, objetivo, conceitos, diretrizes, fluxo macro, fluxo detalhado, matriz raci, guia rápido e apresentação) | 2d | 2017-01-11 08:00 | 2017-01-12 17:00 | 157 |  | Tânia |
| 159 | 18.3 | Validar processo | 0.5d | 2017-01-13 08:00 | 2017-01-13 13:00 | 158 |  | Jorge |
| 160 | 18.4 | Validar processo | 0.5d | 2017-01-13 13:00 | 2017-01-13 17:00 | 159 |  | Dono do Processo; Segurança da Informação |
| 161 | 18.5 | Ajustar | 0.5d | 2017-01-16 08:00 | 2017-01-16 13:00 | 160 |  | Tânia |
| 162 | 18.6 | Publicar no Confluence | 1d | 2017-01-16 13:00 | 2017-01-17 13:00 | 161 | 900d | André |
| 163 | 18.7 | Validar publicação | 1d | 2017-01-17 13:00 | 2017-01-18 13:00 | 162 | 900d | Jorge |
| 164 | 18.8 | Realizar treinamento | 0.5d | 2017-01-16 13:00 | 2017-01-16 17:00 | 161 |  | Tânia |
| 165 | 19 | **DS 11 - Gerenciar Copias de Segurança** | 6d | 2017-01-17 08:00 | 2017-01-24 17:00 |  | 450d |  |
| 166 | 19.1 | Entender Gaps e os AS IS | 0.5d | 2017-01-17 08:00 | 2017-01-17 13:00 | 164 |  | Segurança da Informação; Tânia |
| 167 | 19.2 | Mapear (escopo, objetivo, conceitos, diretrizes, fluxo macro, fluxo detalhado, matriz raci, guia rápido e apresentação) | 2d | 2017-01-17 13:00 | 2017-01-19 13:00 | 166 |  | Tânia |
| 168 | 19.3 | Validar processo | 0.5d | 2017-01-19 13:00 | 2017-01-19 17:00 | 167 |  | Jorge |
| 169 | 19.4 | Validar processo | 0.5d | 2017-01-20 08:00 | 2017-01-20 13:00 | 168 |  | Dono do Processo; Segurança da Informação |
| 170 | 19.5 | Ajustar | 0.5d | 2017-01-20 13:00 | 2017-01-20 17:00 | 169 |  | Tânia |
| 171 | 19.6 | Publicar no Confluence | 1d | 2017-01-23 08:00 | 2017-01-23 17:00 | 170 | 450d | André |
| 172 | 19.7 | Validar publicação | 1d | 2017-01-24 08:00 | 2017-01-24 17:00 | 171 | 450d | Jorge |
| 173 | 19.8 | Realizar treinamento | 0.5d | 2017-01-23 08:00 | 2017-01-23 13:00 | 170 |  | Tânia |
| 174 | 20 | **DS12 - Gerenciar Instalações Físicas** | 6d | 2017-01-23 13:00 | 2017-01-31 13:00 |  |  |  |
| 175 | 20.1 | Entender Gaps e os AS IS | 0.5d | 2017-01-23 13:00 | 2017-01-23 17:00 | 173 |  | Segurança da Informação; Tânia |
| 176 | 20.2 | Mapear (escopo, objetivo, conceitos, diretrizes, fluxo macro, fluxo detalhado, matriz raci, guia rápido e apresentação) | 2d | 2017-01-24 08:00 | 2017-01-25 17:00 | 175 |  | Tânia |
| 177 | 20.3 | Validar processo | 0.5d | 2017-01-26 08:00 | 2017-01-26 13:00 | 176 |  | Jorge |
| 178 | 20.4 | Validar processo | 0.5d | 2017-01-26 13:00 | 2017-01-26 17:00 | 177 |  | Dono do Processo; Segurança da Informação |
| 179 | 20.5 | Ajustar | 0.5d | 2017-01-27 08:00 | 2017-01-27 13:00 | 178 |  | Tânia |
| 180 | 20.6 | Publicar no Confluence | 1d | 2017-01-27 13:00 | 2017-01-30 13:00 | 179 |  | André |
| 181 | 20.7 | Validar publicação | 1d | 2017-01-30 13:00 | 2017-01-31 13:00 | 180 |  | Jorge |
| 182 | 20.8 | Realizar treinamento | 0.5d | 2017-01-27 13:00 | 2017-01-27 17:00 | 179 | 150d | Tânia |
