# Mapeamento dos Processos TI

Schedule from ProjectLibre, 2016-10-19 to 2017-04-14.

## Calendars

- Padrão: Mon-Fri 08:00-12:00, 13:00-17:00; Sat-Sun off. Exceptions (off unless hours are given): 2016-11-01 to 2016-11-02, 2016-11-14 to 2016-11-15, 2016-12-25 to 2016-12-30, 2017-02-27 to 2017-03-01.

## Resources

| Resource | Group |
| --- | --- |
| Não atribuído |  |
| Tânia | Chacon |
| André | Chacon |
| Jorge | Chacon |
| Segurança da Informação | Smiles |
| Dono do Processo | Smiles |
| Thomas | Chacon |

## Schedule

| ID | WBS | Task | Duration | Start | Finish | Predecessors | Total slack | Constraint | Resources |
| --- | --- | --- | --- | --- | --- | --- | --- | --- | --- |
| 1 | 1 | **Projeto de Mapeamento dos Processos de TI** | 119d? | 2016-10-19 | 2017-04-14 |  |  | start no earlier than 2016-10-19 |  |
| 2 | 1.1 | **Gerenciamento de Incidentes de Segurança da Informação** | 12d? | 2016-10-19 | 2016-11-04 |  | 10700d |  |  |
| 3 | 1.1.1 | Criar processo no Jira (workflow e dashboard) | 5d | 2016-10-19 | 2016-10-25 |  | 8600d |  | Jorge |
| 4 | 1.1.2 | Validar processo no Jira | 1d | 2016-10-26 | 2016-10-26 | 3 | 8600d |  | Dono do Processo; Segurança da Informação |
| 5 | 1.1.3 | Ajustar processo no Jira | 1d | 2016-10-27 | 2016-10-27 | 4 | 8600d |  | Jorge |
| 6 | 1.1.4 | Criar material de treinamento | 1d | 2016-10-28 | 2016-10-28 | 5 | 8600d |  | Jorge |
| 7 | 1.1.5 | Validar material de treinamento | 1d | 2016-10-31 | 2016-10-31 | 6 | 8600d |  | Dono do Processo; Segurança da Informação |
| 8 | 1.1.6 | Ajustar material de treinamento | 1d | 2016-11-01 | 2016-11-01 | 7 | 8600d |  | Jorge |
| 9 | 1.1.7 | Realizar treinamento | 1d | 2016-11-03 | 2016-11-03 | 8 | 8600d |  | Jorge |
| 10 | 1.1.8 | Criar dahboard no JIRA | 1d? | 2016-11-04 | 2016-11-04 | 9 | 10700d |  | Jorge |
| 11 | 1.2 | **AI6 - Gerenciamento de Mudanças** | 20d? | 2016-10-19 | 2016-11-17 |  | 9900d |  |  |
| 12 | 1.2.1 | Entender Gaps e os AS IS | 1d | 2016-10-19 | 2016-10-19 |  | 9900d |  | Segurança da Informação; Tânia |
| 13 | 1.2.2 | Mapear (escopo, objetivo, conceitos, diretrizes, fluxo macro, fluxo detalhado, matriz raci e guia rápido) | 2d | 2016-10-20 | 2016-10-21 | 12 | 9900d |  | Tânia |
| 14 | 1.2.3 | Validar processo | 1d | 2016-10-24 | 2016-10-24 | 13 | 9900d |  | Tânia |
| 15 | 1.2.4 | Validar processo | 2d | 2016-10-25 | 2016-10-26 | 14 | 9900d |  | Dono do Processo; Segurança da Informação |
| 16 | 1.2.5 | Ajustar | 1d | 2016-10-27 | 2016-10-27 | 15 | 9900d |  | Tânia |
| 17 | 1.2.6 | Publicar no Confluence | 1d | 2016-10-28 | 2016-10-28 | 16 | 9900d |  | André |
| 18 | 1.2.7 | Validar publicação | 1d | 2016-10-31 | 2016-10-31 | 17 | 9900d |  | Tânia |
| 19 | 1.2.8 | Criar processo no Jira (workflow e dashboard) | 4d | 2016-11-01 | 2016-11-07 | 18 | 9900d |  | Tânia |
| 20 | 1.2.9 | Validar processo no Jira | 1d | 2016-11-08 | 2016-11-08 | 19 | 9900d |  | Dono do Processo; Segurança da Informação |
| 21 | 1.2.10 | Ajustar processo no Jira | 1d | 2016-11-09 | 2016-11-09 | 20 | 9900d |  | Tânia |
| 22 | 1.2.11 | Criar material de treinamento | 1d | 2016-11-10 | 2016-11-10 | 21 | 9900d |  | Tânia |
| 23 | 1.2.12 | Validar material de treinamento | 1d | 2016-11-11 | 2016-11-11 | 22 | 9900d |  | Tânia |
| 24 | 1.2.13 | Ajustar material de treinamento | 1d | 2016-11-14 | 2016-11-14 | 23 | 9900d |  | Tânia |
| 25 | 1.2.14 | Realizar teste de mesa | 1d? | 2016-11-14 | 2016-11-14 | 23 | 10100d |  | Tânia |
| 26 | 1.2.15 | Realizar treinamento | 2d | 2016-11-16 | 2016-11-17 | 24 | 9900d |  | Tânia |

| ID | WBS | Task | Duration | Start | Finish | Predecessors | Total slack | Constraint | Resources |
| --- | --- | --- | --- | --- | --- | --- | --- | --- | --- |
| 27 | 1.3 | **DS5.9.A - Gestão de Antivírus** | 9d? | 2016-10-19 | 2016-10-31 |  | 11000d | start no earlier than 2016-10-19 |  |
| 28 | 1.3.1 | Entender Gaps e os AS IS | 1d | 2016-10-19 | 2016-10-19 |  | 1400d |  | Segurança da Informação; Tânia |
| 29 | 1.3.2 | Mapear (escopo, objetivo, conceitos, diretrizes, fluxo macro, fluxo detalhado, matriz raci, guia rápido e apresentação) | 2d | 2016-10-20 | 2016-10-21 | 28 | 1400d |  | Tânia |
| 30 | 1.3.3 | Validar processo | 1d | 2016-10-24 | 2016-10-24 | 29 | 1400d |  | Tânia |
| 31 | 1.3.4 | Validar processo | 2d | 2016-10-25 | 2016-10-26 | 30 | 1400d |  | Dono do Processo; Segurança da Informação |
| 32 | 1.3.5 | Ajustar | 1d | 2016-10-27 | 2016-10-27 | 31 | 1400d |  | Tânia |
| 33 | 1.3.6 | Publicar no Confluence | 1d | 2016-10-28 | 2016-10-28 | 32 | 11000d |  | André |
| 34 | 1.3.7 | Validar publicação | 1d | 2016-10-31 | 2016-10-31 | 33 | 11000d |  | Tânia |
| 35 | 1.3.8 | Criar Matriz de Controles e Riscos | 1d? | 2016-10-31 | 2016-10-31 | 33 | 11000d |  | Tânia |
| 36 | 1.3.9 | Realizar treinamento | 1d | 2016-10-28 | 2016-10-28 | 32 | 1400d |  | Tânia |
| 37 | 1.4 | **DS5.9.B – Administrar Patches - Servidores das Bases** | 9d? | 2016-10-31 | 2016-11-11 |  | 10200d |  |  |
| 38 | 1.4.1 | Entender Gaps e os AS IS | 1d | 2016-10-31 | 2016-10-31 | 36 | 1400d |  | Segurança da Informação; Tânia |
| 39 | 1.4.2 | Mapear (escopo, objetivo, conceitos, diretrizes, fluxo macro, fluxo detalhado, matriz raci, guia rápido e apresentação) | 2d | 2016-11-01 | 2016-11-03 | 38 | 1400d |  | Tânia |
| 40 | 1.4.3 | Validar processo | 1d | 2016-11-04 | 2016-11-04 | 39 | 1400d |  | Tânia |
| 41 | 1.4.4 | Validar processo | 2d | 2016-11-07 | 2016-11-08 | 40 | 1400d |  | Dono do Processo; Segurança da Informação |
| 42 | 1.4.5 | Ajustar | 1d | 2016-11-09 | 2016-11-09 | 41 | 1400d |  | Tânia |
| 43 | 1.4.6 | Publicar no Confluence | 1d | 2016-11-10 | 2016-11-10 | 42 | 10200d |  | André |
| 44 | 1.4.7 | Validar publicação | 1d | 2016-11-11 | 2016-11-11 | 43 | 10200d |  | Tânia |
| 45 | 1.4.8 | Criar Matriz de Controles e Riscos | 1d? | 2016-11-11 | 2016-11-11 | 43 | 10200d |  | Tânia |
| 46 | 1.4.9 | Realizar treinamento | 1d | 2016-11-10 | 2016-11-10 | 42 | 1400d |  | Tânia |
| 47 | 1.5 | **DS03 - Gerenciar o Desempenho e Capacidade** | 8d? | 2016-11-04 | 2016-11-16 |  | 10000d |  |  |
| 48 | 1.5.1 | Entender Gaps e os AS IS | 1d | 2016-11-04 | 2016-11-04 | 9 | 8600d |  | Segurança da Informação; Tânia |
| 49 | 1.5.2 | Mapear (escopo, objetivo, conceitos, diretrizes, fluxo macro, fluxo detalhado, matriz raci, guia rápido e apresentação) | 2d | 2016-11-07 | 2016-11-08 | 48 | 8600d |  | Tânia |
| 50 | 1.5.3 | Validar processo | 1d | 2016-11-09 | 2016-11-09 | 49 | 8600d |  | Dono do Processo; Segurança da Informação |
| 51 | 1.5.4 | Ajustar | 2d | 2016-11-10 | 2016-11-11 | 50 | 8600d |  | Tânia |
| 52 | 1.5.5 | Publicar no Confluence | 1d | 2016-11-14 | 2016-11-14 | 51 | 10000d |  | André |
| 53 | 1.5.6 | Validar publicação | 1d | 2016-11-16 | 2016-11-16 | 52 | 10000d |  | Tânia |
| 54 | 1.5.7 | Criar Matriz de Controles e Riscos | 1d? | 2016-11-16 | 2016-11-16 | 52 | 10000d |  | Tânia |
| 55 | 1.5.8 | Realizar treinamento | 1d | 2016-11-14 | 2016-11-14 | 51 | 8600d |  | Tânia |

| ID | WBS | Task | Duration | Start | Finish | Predecessors | Total slack | Resources |
| --- | --- | --- | --- | --- | --- | --- | --- | --- |
| 56 | 1.6 | **M01 - Monitorar Processos** | 9d | 2016-11-11 | 2016-11-24 |  | 9400d |  |
| 57 | 1.6.1 | Entender Gaps e os AS IS | 1d | 2016-11-11 | 2016-11-11 | 46 | 1400d | Segurança da Informação; Tânia |
| 58 | 1.6.2 | Mapear (escopo, objetivo, conceitos, diretrizes, fluxo macro, fluxo detalhado, matriz raci, guia rápido e apresentação) | 2d | 2016-11-14 | 2016-11-16 | 57 | 1400d | Tânia |
| 59 | 1.6.3 | Validar processo | 1d | 2016-11-17 | 2016-11-17 | 58 | 1400d | Tânia |
| 60 | 1.6.4 | Validar processo | 2d | 2016-11-18 | 2016-11-21 | 59 | 1400d | Dono do Processo; Segurança da Informação |
| 61 | 1.6.5 | Ajustar | 1d | 2016-11-22 | 2016-11-22 | 60 | 1400d | Tânia |
| 62 | 1.6.6 | Publicar no Confluence | 1d | 2016-11-23 | 2016-11-23 | 61 | 9400d | André |
| 63 | 1.6.7 | Validar publicação | 1d | 2016-11-24 | 2016-11-24 | 62 | 9400d | Tânia |
| 64 | 1.6.8 | Realizar treinamento | 1d | 2016-11-23 | 2016-11-23 | 61 | 1400d | Tânia |
| 65 | 1.7 | **Gerenciamento Financeiro dos Contratos de TI** | 8d | 2016-11-16 | 2016-11-25 |  | 9300d |  |
| 66 | 1.7.1 | Entender Gaps e os AS IS | 1d | 2016-11-16 | 2016-11-16 | 55 | 8600d | Segurança da Informação; Tânia |
| 67 | 1.7.2 | Mapear (escopo, objetivo, conceitos, diretrizes, fluxo macro, fluxo detalhado, matriz raci, guia rápido e apresentação) | 2d | 2016-11-17 | 2016-11-18 | 66 | 8600d | Tânia |
| 68 | 1.7.3 | Validar processo | 1d | 2016-11-21 | 2016-11-21 | 67 | 8600d | Dono do Processo; Segurança da Informação |
| 69 | 1.7.4 | Ajustar | 2d | 2016-11-22 | 2016-11-23 | 68 | 8600d | Tânia |
| 70 | 1.7.5 | Publicar no Confluence | 1d | 2016-11-24 | 2016-11-24 | 69 | 9300d | André |
| 71 | 1.7.6 | Validar publicação | 1d | 2016-11-25 | 2016-11-25 | 70 | 9300d | Tânia |
| 72 | 1.7.7 | Realizar treinamento | 1d | 2016-11-24 | 2016-11-24 | 69 | 8600d | Tânia |
| 73 | 1.8 | **DS2 - Gerenciar Serviços de Terceiros e DS1 - Definir e Gerenciar Níveis de Serviço** | 8d? | 2016-11-25 | 2016-12-06 |  | 8600d |  |
| 74 | 1.8.1 | Entender Gaps e os AS IS | 1d | 2016-11-25 | 2016-11-25 | 72 | 8600d | Segurança da Informação; Tânia |
| 75 | 1.8.2 | Mapear (escopo, objetivo, conceitos, diretrizes, fluxo macro, fluxo detalhado, matriz raci, guia rápido e apresentação) | 2d | 2016-11-28 | 2016-11-29 | 74 | 8600d | Jorge |
| 76 | 1.8.3 | Validar processo | 1d | 2016-11-30 | 2016-11-30 | 75 | 8600d | Dono do Processo; Segurança da Informação |
| 77 | 1.8.4 | Ajustar | 2d | 2016-12-01 | 2016-12-02 | 76 | 8600d | Jorge |
| 78 | 1.8.5 | Publicar no Confluence | 1d | 2016-12-05 | 2016-12-05 | 77 | 8600d | André |
| 79 | 1.8.6 | Validar publicação | 1d | 2016-12-06 | 2016-12-06 | 78 | 8600d | Jorge |
| 80 | 1.8.7 | Realizar treinamento | 1d | 2016-12-05 | 2016-12-05 | 77 | 8700d | Jorge |
| 81 | 1.8.8 | Criar Matriz de Controles e Riscos | 1d? | 2016-12-05 | 2016-12-05 | 77 | 8700d | Tânia |

| ID | WBS | Task | Duration | Start | Finish | Predecessors | Total slack | Constraint | Resources |
| --- | --- | --- | --- | --- | --- | --- | --- | --- | --- |
| 82 | 1.9 | **PO2 - Definir Arquitetura da Informação** | 9d? | 2016-11-24 | 2016-12-06 |  | 8600d |  |  |
| 83 | 1.9.1 | Entender Gaps e os AS IS | 1d | 2016-11-24 | 2016-11-24 | 64 | 1400d |  | Segurança da Informação; Tânia |
| 84 | 1.9.2 | Mapear (escopo, objetivo, conceitos, diretrizes, fluxo macro, fluxo detalhado, matriz raci, guia rápido e apresentação) | 2d | 2016-11-25 | 2016-11-28 | 83 | 1400d |  | Tânia |
| 85 | 1.9.3 | Validar processo | 1d | 2016-11-29 | 2016-11-29 | 84 | 1400d |  | Tânia |
| 86 | 1.9.4 | Validar processo | 2d | 2016-11-30 | 2016-12-01 | 85 | 1400d |  | Dono do Processo; Segurança da Informação |
| 87 | 1.9.5 | Ajustar | 1d | 2016-12-02 | 2016-12-02 | 86 | 1400d |  | Tânia |
| 88 | 1.9.6 | Publicar no Confluence | 1d | 2016-12-05 | 2016-12-05 | 87 | 8600d |  | André |
| 89 | 1.9.7 | Validar publicação | 1d | 2016-12-06 | 2016-12-06 | 88 | 8600d |  | Tânia |
| 90 | 1.9.8 | Criar Matriz de Controles e Riscos | 1d? | 2016-12-06 | 2016-12-06 | 88 | 8600d |  | Tânia |
| 91 | 1.9.9 | Realizar treinamento | 1d | 2016-12-05 | 2016-12-05 | 87 | 1400d |  | Tânia |
| 92 | 1.10 | **AI1 – Identificar Soluções Automatizadas** | 9d | 2017-01-02 | 2017-01-12 |  | 6400d | start no earlier than 2017-01-02 |  |
| 93 | 1.10.1 | Entender Gaps e os AS IS | 1d | 2017-01-02 | 2017-01-02 | 91 |  |  | Segurança da Informação; Tânia |
| 94 | 1.10.2 | Mapear (escopo, objetivo, conceitos, diretrizes, fluxo macro, fluxo detalhado, matriz raci, guia rápido e apresentação) | 2d | 2017-01-03 | 2017-01-04 | 93 |  |  | Thomas |
| 95 | 1.10.3 | Validar processo | 1d | 2017-01-05 | 2017-01-05 | 94 |  |  | Jorge |
| 96 | 1.10.4 | Validar processo | 2d | 2017-01-06 | 2017-01-09 | 95 |  |  | Dono do Processo; Segurança da Informação |
| 97 | 1.10.5 | Ajustar | 1d | 2017-01-10 | 2017-01-10 | 96 |  |  | Thomas |
| 98 | 1.10.6 | Publicar no Confluence | 1d | 2017-01-11 | 2017-01-11 | 97 | 6400d |  | André |
| 99 | 1.10.7 | Validar publicação | 1d | 2017-01-12 | 2017-01-12 | 98 | 6400d |  | Jorge |
| 100 | 1.10.8 | Realizar treinamento | 1d | 2017-01-11 | 2017-01-11 | 97 |  |  | Thomas |
| 101 | 1.11 | **AI2 - Adquirir e manter aplicações de software** | 9d | 2017-01-12 | 2017-01-24 |  | 5600d |  |  |
| 102 | 1.11.1 | Entender Gaps e os AS IS | 1d | 2017-01-12 | 2017-01-12 | 100 |  |  | Segurança da Informação; Tânia |
| 103 | 1.11.2 | Mapear (escopo, objetivo, conceitos, diretrizes, fluxo macro, fluxo detalhado, matriz raci, guia rápido e apresentação) | 2d | 2017-01-13 | 2017-01-16 | 102 |  |  | Thomas |
| 104 | 1.11.3 | Validar processo | 1d | 2017-01-17 | 2017-01-17 | 103 |  |  | Jorge |
| 105 | 1.11.4 | Validar processo | 2d | 2017-01-18 | 2017-01-19 | 104 |  |  | Dono do Processo; Segurança da Informação |
| 106 | 1.11.5 | Ajustar | 1d | 2017-01-20 | 2017-01-20 | 105 |  |  | Thomas |
| 107 | 1.11.6 | Publicar no Confluence | 1d | 2017-01-23 | 2017-01-23 | 106 | 5600d |  | André |
| 108 | 1.11.7 | Validar publicação | 1d | 2017-01-24 | 2017-01-24 | 107 | 5600d |  | Jorge |
| 109 | 1.11.8 | Realizar treinamento | 1d | 2017-01-23 | 2017-01-23 | 106 |  |  | Thomas |

| ID | WBS | Task | Duration | Start | Finish | Predecessors | Total slack | Resources |
| --- | --- | --- | --- | --- | --- | --- | --- | --- |
| 110 | 1.12 | **AI3 - Adquirir e manter infraestrutura tecnológica** | 9d | 2017-01-24 | 2017-02-03 |  | 4800d |  |
| 111 | 1.12.1 | Entender Gaps e os AS IS | 1d | 2017-01-24 | 2017-01-24 | 109 |  | Segurança da Informação; Tânia |
| 112 | 1.12.2 | Mapear (escopo, objetivo, conceitos, diretrizes, fluxo macro, fluxo detalhado, matriz raci, guia rápido e apresentação) | 2d | 2017-01-25 | 2017-01-26 | 111 |  | Thomas |
| 113 | 1.12.3 | Validar processo | 1d | 2017-01-27 | 2017-01-27 | 112 |  | Jorge |
| 114 | 1.12.4 | Validar processo | 2d | 2017-01-30 | 2017-01-31 | 113 |  | Dono do Processo; Segurança da Informação |
| 115 | 1.12.5 | Ajustar | 1d | 2017-02-01 | 2017-02-01 | 114 |  | Thomas |
| 116 | 1.12.6 | Publicar no Confluence | 1d | 2017-02-02 | 2017-02-02 | 115 | 4800d | André |
| 117 | 1.12.7 | Validar publicação | 1d | 2017-02-03 | 2017-02-03 | 116 | 4800d | Jorge |
| 118 | 1.12.8 | Realizar treinamento | 1d | 2017-02-02 | 2017-02-02 | 115 |  | Thomas |
| 119 | 1.13 | **AI4 - Desenvolver e manter manuais de Sistemas** | 9d | 2017-02-03 | 2017-02-15 |  | 4000d |  |
| 120 | 1.13.1 | Entender Gaps e os AS IS | 1d | 2017-02-03 | 2017-02-03 | 118 |  | Segurança da Informação; Tânia |
| 121 | 1.13.2 | Mapear (escopo, objetivo, conceitos, diretrizes, fluxo macro, fluxo detalhado, matriz raci, guia rápido e apresentação) | 2d | 2017-02-06 | 2017-02-07 | 120 |  | Thomas |
| 122 | 1.13.3 | Validar processo | 1d | 2017-02-08 | 2017-02-08 | 121 |  | Jorge |
| 123 | 1.13.4 | Validar processo | 2d | 2017-02-09 | 2017-02-10 | 122 |  | Dono do Processo; Segurança da Informação |
| 124 | 1.13.5 | Ajustar | 1d | 2017-02-13 | 2017-02-13 | 123 |  | Thomas |
| 125 | 1.13.6 | Publicar no Confluence | 1d | 2017-02-14 | 2017-02-14 | 124 | 4000d | André |
| 126 | 1.13.7 | Validar publicação | 1d | 2017-02-15 | 2017-02-15 | 125 | 4000d | Jorge |
| 127 | 1.13.8 | Realizar treinamento | 1d | 2017-02-14 | 2017-02-14 | 124 |  | Thomas |
| 128 | 1.14 | **AI7 - Gerenciamento, Instalação e Homologação** | 9d | 2017-02-15 | 2017-02-27 |  | 3200d |  |
| 129 | 1.14.1 | Entender Gaps e os AS IS | 1d | 2017-02-15 | 2017-02-15 | 127 |  | Segurança da Informação; Tânia |
| 130 | 1.14.2 | Mapear (escopo, objetivo, conceitos, diretrizes, fluxo macro, fluxo detalhado, matriz raci, guia rápido e apresentação) | 2d | 2017-02-16 | 2017-02-17 | 129 |  | Thomas |
| 131 | 1.14.3 | Validar processo | 1d | 2017-02-20 | 2017-02-20 | 130 |  | Jorge |
| 132 | 1.14.4 | Validar processo | 2d | 2017-02-21 | 2017-02-22 | 131 |  | Dono do Processo; Segurança da Informação |
| 133 | 1.14.5 | Ajustar | 1d | 2017-02-23 | 2017-02-23 | 132 |  | Thomas |
| 134 | 1.14.6 | Publicar no Confluence | 1d | 2017-02-24 | 2017-02-24 | 133 | 3200d | André |
| 135 | 1.14.7 | Validar publicação | 1d | 2017-02-27 | 2017-02-27 | 134 | 3200d | Jorge |
| 136 | 1.14.8 | Realizar treinamento | 1d | 2017-02-24 | 2017-02-24 | 133 |  | Thomas |

| ID | WBS | Task | Duration | Start | Finish | Predecessors | Total slack | Resources |
| --- | --- | --- | --- | --- | --- | --- | --- | --- |
| 137 | 1.15 | **DS5.5 - Assegurar Segurança de Sistemas** | 9d | 2017-02-27 | 2017-03-13 |  | 2400d |  |
| 138 | 1.15.1 | Entender Gaps e os AS IS | 1d | 2017-02-27 | 2017-02-27 | 136 |  | Segurança da Informação; Tânia |
| 139 | 1.15.2 | Mapear (escopo, objetivo, conceitos, diretrizes, fluxo macro, fluxo detalhado, matriz raci, guia rápido e apresentação) | 2d | 2017-03-02 | 2017-03-03 | 138 |  | Thomas |
| 140 | 1.15.3 | Validar processo | 1d | 2017-03-06 | 2017-03-06 | 139 |  | Jorge |
| 141 | 1.15.4 | Validar processo | 2d | 2017-03-07 | 2017-03-08 | 140 |  | Dono do Processo; Segurança da Informação |
| 142 | 1.15.5 | Ajustar | 1d | 2017-03-09 | 2017-03-09 | 141 |  | Thomas |
| 143 | 1.15.6 | Publicar no Confluence | 1d | 2017-03-10 | 2017-03-10 | 142 | 2400d | André |
| 144 | 1.15.7 | Validar publicação | 1d | 2017-03-13 | 2017-03-13 | 143 | 2400d | Jorge |
| 145 | 1.15.8 | Realizar treinamento | 1d | 2017-03-10 | 2017-03-10 | 142 |  | Tânia |
| 146 | 1.16 | **DS5.8 - Gestão de chaves criptográficas, DS5.10 - Administração de Firewall e DS5.11 - Gestão de Certificados Digitais** | 9d | 2017-03-13 | 2017-03-23 |  | 1600d |  |
| 147 | 1.16.1 | Entender Gaps e os AS IS | 1d | 2017-03-13 | 2017-03-13 | 145 |  | Segurança da Informação; Tânia |
| 148 | 1.16.2 | Mapear (escopo, objetivo, conceitos, diretrizes, fluxo macro, fluxo detalhado, matriz raci, guia rápido e apresentação) | 2d | 2017-03-14 | 2017-03-15 | 147 |  | Thomas |
| 149 | 1.16.3 | Validar processo | 1d | 2017-03-16 | 2017-03-16 | 148 |  | Jorge |
| 150 | 1.16.4 | Validar processo | 2d | 2017-03-17 | 2017-03-20 | 149 |  | Dono do Processo; Segurança da Informação |
| 151 | 1.16.5 | Ajustar | 1d | 2017-03-21 | 2017-03-21 | 150 |  | Thomas |
| 152 | 1.16.6 | Publicar no Confluence | 1d | 2017-03-22 | 2017-03-22 | 151 | 1600d | André |
| 153 | 1.16.7 | Validar publicação | 1d | 2017-03-23 | 2017-03-23 | 152 | 1600d | Jorge |
| 154 | 1.16.8 | Realizar treinamento | 1d | 2017-03-22 | 2017-03-22 | 151 |  | Thomas |
| 155 | 1.17 | **DS 11 - Gerenciar Copias de Segurança** | 9d | 2017-03-23 | 2017-04-04 |  | 800d |  |
| 156 | 1.17.1 | Entender Gaps e os AS IS | 1d | 2017-03-23 | 2017-03-23 | 154 |  | Segurança da Informação; Tânia |
| 157 | 1.17.2 | Mapear (escopo, objetivo, conceitos, diretrizes, fluxo macro, fluxo detalhado, matriz raci, guia rápido e apresentação) | 2d | 2017-03-24 | 2017-03-27 | 156 |  | Thomas |
| 158 | 1.17.3 | Validar processo | 1d | 2017-03-28 | 2017-03-28 | 157 |  | Jorge |
| 159 | 1.17.4 | Validar processo | 2d | 2017-03-29 | 2017-03-30 | 158 |  | Dono do Processo; Segurança da Informação |
| 160 | 1.17.5 | Ajustar | 1d | 2017-03-31 | 2017-03-31 | 159 |  | Thomas |
| 161 | 1.17.6 | Publicar no Confluence | 1d | 2017-04-03 | 2017-04-03 | 160 | 800d | André |
| 162 | 1.17.7 | Validar publicação | 1d | 2017-04-04 | 2017-04-04 | 161 | 800d | Jorge |
| 163 | 1.17.8 | Realizar treinamento | 1d | 2017-04-03 | 2017-04-03 | 160 |  | Tânia |

| ID | WBS | Task | Duration | Start | Finish | Predecessors | Total slack | Resources |
| --- | --- | --- | --- | --- | --- | --- | --- | --- |
| 164 | 1.18 | **DS12 - Gerenciar Instalações Físicas** | 9d | 2017-04-04 | 2017-04-14 |  |  |  |
| 165 | 1.18.1 | Entender Gaps e os AS IS | 1d | 2017-04-04 | 2017-04-04 | 163 |  | Segurança da Informação; Tânia |
| 166 | 1.18.2 | Mapear (escopo, objetivo, conceitos, diretrizes, fluxo macro, fluxo detalhado, matriz raci, guia rápido e apresentação) | 2d | 2017-04-05 | 2017-04-06 | 165 |  | Thomas |
| 167 | 1.18.3 | Validar processo | 1d | 2017-04-07 | 2017-04-07 | 166 |  | Jorge |
| 168 | 1.18.4 | Validar processo | 2d | 2017-04-10 | 2017-04-11 | 167 |  | Dono do Processo; Segurança da Informação |
| 169 | 1.18.5 | Ajustar | 1d | 2017-04-12 | 2017-04-12 | 168 |  | Thomas |
| 170 | 1.18.6 | Publicar no Confluence | 1d | 2017-04-13 | 2017-04-13 | 169 |  | André |
| 171 | 1.18.7 | Validar publicação | 1d | 2017-04-14 | 2017-04-14 | 170 |  | Jorge |
| 172 | 1.18.8 | Realizar treinamento | 1d | 2017-04-13 | 2017-04-13 | 169 | 100d | Thomas |
